# Planificación RestApp Nueva

Schedule from MS Project, 2013-07-30 to 2014-09-23, status date 2013-07-29.

## Calendars

- Tesis: Mon off; Tue-Thu 17:00-21:00; Fri-Sun off. Exceptions (off unless hours are given): 2013-08-19 (Feriado), 2013-08-21 to 2013-08-23 (Congreso De Sistema), 2013-09-09 to 2013-09-13 (Fecha de examen), 2013-10-14 (Feriado), 2013-10-21 to 2013-10-25 (Fecha de examen), 2013-11-25 (Feriado), 2013-12-02 to 2013-12-06 (Fecha de examen), 2013-12-16 to 2013-12-20 (Fecha de examen), 2013-12-23 to 2013-12-27 (Semana de navidad), 2013-12-30 to 2014-01-03 (Semana de año nuevo), 2014-01-06 to 2014-01-31 (Vacaciones), 2014-02-10 to 2014-02-14 (Fecha de examen), 2014-02-17 to 2014-02-25 (Fecha de examen), 2014-03-03 to 2014-03-07 (Fecha de examen).

## Resources

| Resource |
| --- |
| Oscar Salomón |
| Lucas Ferrero |
| Fernando Raviola |

## Schedule

| ID | WBS | Task | Type | Duration | Start | Finish | Predecessors | Baseline start | Baseline finish | Baseline duration | Total slack | Resources | Work |
| --- | --- | --- | --- | --- | --- | --- | --- | --- | --- | --- | --- | --- | --- |
| 1 | 1 | **RestApp** |  | 69.12d | 2013-07-30 17:00 | 2014-09-23 18:00 |  | 2013-07-30 17:00 | 2014-09-23 18:00 | 69.12d | 0d |  | 1627h |
| 2 | 1.1 | **INICIO** |  | 10.5d | 2013-07-30 17:00 | 2013-09-25 21:00 |  | 2013-07-30 17:00 | 2013-09-25 21:00 | 10.5d | 0d |  | 252h |
| 3 | 1.1.1 | **Iteración I1** |  | 10.5d | 2013-07-30 17:00 | 2013-09-25 21:00 |  | 2013-07-30 17:00 | 2013-09-25 21:00 | 10.5d | 0d |  | 252h |
| 4 | 1.1.1.1 | **Modelo de Negocio** |  | 1.25d | 2013-07-30 17:00 | 2013-08-01 19:00 |  | 2013-07-30 17:00 | 2013-08-01 19:00 | 1.25d | 0d |  | 30h |
| 5 | 1.1.1.1.1 | Analisis del dominio del problema |  | 4h | 2013-07-30 17:00 | 2013-07-30 21:00 |  | 2013-07-30 17:00 | 2013-07-30 21:00 | 4h | 0d | Fernando Raviola; Lucas Ferrero; Oscar Salomón | 12h |
| 6 | 1.1.1.1.2 | Confección de entrevista |  | 2h | 2013-07-31 17:00 | 2013-07-31 19:00 | 5 | 2013-07-31 17:00 | 2013-07-31 19:00 | 2h | 0d | Fernando Raviola; Lucas Ferrero; Oscar Salomón | 6h |
| 7 | 1.1.1.1.3 | Realización de entrevista |  | 2h | 2013-07-31 19:00 | 2013-07-31 21:00 | 6 | 2013-07-31 19:00 | 2013-07-31 21:00 | 2h | 0d | Fernando Raviola; Lucas Ferrero; Oscar Salomón | 6h |
| 8 | 1.1.1.1.4 | Analisis de Entrevista |  | 2h | 2013-08-01 17:00 | 2013-08-01 19:00 | 7 | 2013-08-01 17:00 | 2013-08-01 19:00 | 2h | 0d | Fernando Raviola; Lucas Ferrero; Oscar Salomón | 6h |
| 9 | 1.1.1.2 | **Requerimientos** |  | 2.25d | 2013-08-01 19:00 | 2013-08-13 21:00 | 4 | 2013-08-01 19:00 | 2013-08-13 21:00 | 2.25d | 0d |  | 54h |
| 10 | 1.1.1.2.1 | Definición de caracteristicas y limitaciones |  | 8h | 2013-08-01 19:00 | 2013-08-07 19:00 |  | 2013-08-01 19:00 | 2013-08-07 19:00 | 8h | 0d | Fernando Raviola; Lucas Ferrero; Oscar Salomón | 24h |
| 11 | 1.1.1.2.2 | Definición de Requerimientos Funcionales y No Funcionales |  | 10h | 2013-08-07 19:00 | 2013-08-13 21:00 | 10 | 2013-08-07 19:00 | 2013-08-13 21:00 | 10h | 0d | Fernando Raviola; Lucas Ferrero; Oscar Salomón | 30h |
| 12 | 1.1.1.3 | **Análisis/Diseño** |  | 1d | 2013-08-14 17:00 | 2013-08-15 21:00 | 9 | 2013-08-14 17:00 | 2013-08-15 21:00 | 1d | 0d |  | 24h |
| 13 | 1.1.1.3.1 | Definición inicial del Modelo de Casos de Usos |  | 8h | 2013-08-14 17:00 | 2013-08-15 21:00 |  | 2013-08-14 17:00 | 2013-08-15 21:00 | 8h | 0d | Fernando Raviola; Lucas Ferrero; Oscar Salomón | 24h |
| 14 | 1.1.1.4 | **Gestión del Proyecto** |  | 4.5d | 2013-08-20 17:00 | 2013-09-18 21:00 | 12 | 2013-08-20 17:00 | 2013-09-18 21:00 | 4.5d | 0d |  | 108h |
| 15 | 1.1.1.4.1 | Estudio de prefactibilidad |  | 8h | 2013-08-20 17:00 | 2013-08-27 21:00 |  | 2013-08-20 17:00 | 2013-08-27 21:00 | 8h | 0d | Fernando Raviola; Lucas Ferrero; Oscar Salomón | 24h |
| 16 | 1.1.1.4.2 | Planificación |  | 8h | 2013-08-28 17:00 | 2013-08-29 21:00 | 15 | 2013-08-28 17:00 | 2013-08-29 21:00 | 8h | 0d | Fernando Raviola; Lucas Ferrero; Oscar Salomón | 24h |
| 17 | 1.1.1.4.3 | Gestión de riesgos (definición) |  | 8h | 2013-09-03 17:00 | 2013-09-04 21:00 | 16 | 2013-09-03 17:00 | 2013-09-04 21:00 | 8h | 0d | Fernando Raviola; Lucas Ferrero; Oscar Salomón | 24h |
| 18 | 1.1.1.4.4 | Gestión de configuración (definición) |  | 8h | 2013-09-05 17:00 | 2013-09-17 21:00 | 17 | 2013-09-05 17:00 | 2013-09-17 21:00 | 8h | 0d | Fernando Raviola; Lucas Ferrero; Oscar Salomón | 24h |
| 19 | 1.1.1.4.5 | Presentación Inicial |  | 0.5d | 2013-09-18 17:00 | 2013-09-18 21:00 | 18 | 2013-09-18 17:00 | 2013-09-18 21:00 | 0.5d | 0d | Fernando Raviola; Lucas Ferrero; Oscar Salomón | 12h |
| 20 | 1.1.1.5 | **Gestión de configuración** |  | 1d | 2013-09-19 17:00 | 2013-09-24 21:00 | 14 | 2013-09-19 17:00 | 2013-09-24 21:00 | 1d | 0d |  | 24h |
| 21 | 1.1.1.5.1 | Preparación del ambiente de versionado |  | 8h | 2013-09-19 17:00 | 2013-09-24 21:00 |  | 2013-09-19 17:00 | 2013-09-24 21:00 | 8h | 0d | Fernando Raviola; Lucas Ferrero; Oscar Salomón | 24h |
| 22 | 1.1.1.6 | **Ambiente** |  | 0.5d | 2013-09-25 17:00 | 2013-09-25 21:00 | 20 | 2013-09-25 17:00 | 2013-09-25 21:00 | 0.5d | 0d |  | 12h |
| 23 | 1.1.1.6.1 | Identificación y evaluación de herramientas |  | 4h | 2013-09-25 17:00 | 2013-09-25 21:00 |  | 2013-09-25 17:00 | 2013-09-25 21:00 | 4h | 0d | Fernando Raviola; Lucas Ferrero; Oscar Salomón | 12h |
| 24 | 1.2 | Objetivos del ciclo de vida | milestone | 0h | 2013-09-25 21:00 | 2013-09-25 21:00 | 2 | 2013-09-25 21:00 | 2013-09-25 21:00 |  | 0d |  |  |

| ID | WBS | Task | Duration | Start | Finish | Predecessors | Baseline start | Baseline finish | Baseline duration | Total slack | Resources | Work |
| --- | --- | --- | --- | --- | --- | --- | --- | --- | --- | --- | --- | --- |
| 25 | 1.3 | **ELABORACIÓN** | 19d | 2013-09-26 17:00 | 2014-03-19 21:00 | 24 | 2013-09-26 17:00 | 2014-03-19 21:00 | 19d | 0d |  | 439h |
| 26 | 1.3.1 | **Iteración E1** | 7.12d | 2013-09-26 17:00 | 2013-11-06 18:00 |  | 2013-09-26 17:00 | 2013-11-06 18:00 | 7.12d | 0d |  | 171h |
| 27 | 1.3.1.1 | **Modelo de Negocio** | 0.88d | 2013-09-26 17:00 | 2013-10-01 20:00 |  | 2013-09-26 17:00 | 2013-10-01 20:00 | 0.88d | 0d |  | 21h |
| 28 | 1.3.1.1.1 | Entendimiento del Modelo de Negocio | 7h | 2013-09-26 17:00 | 2013-10-01 20:00 |  | 2013-09-26 17:00 | 2013-10-01 20:00 | 7h | 0d | Fernando Raviola; Lucas Ferrero; Oscar Salomón | 21h |
| 29 | 1.3.1.2 | **Requerimientos** | 1.5d | 2013-10-01 20:00 | 2013-10-08 20:00 | 27 | 2013-10-01 20:00 | 2013-10-08 20:00 | 1.5d | 0d |  | 36h |
| 30 | 1.3.1.2.1 | Definicón de nuevos requerimientos | 2h | 2013-10-01 20:00 | 2013-10-02 18:00 |  | 2013-10-01 20:00 | 2013-10-02 18:00 | 2h | 0d | Fernando Raviola; Lucas Ferrero; Oscar Salomón | 6h |
| 31 | 1.3.1.2.2 | Documentación de requerimientos según estandar | 5h | 2013-10-02 18:00 | 2013-10-03 19:00 | 30 | 2013-10-02 18:00 | 2013-10-03 19:00 | 5h | 0d | Fernando Raviola; Lucas Ferrero; Oscar Salomón | 15h |
| 32 | 1.3.1.2.3 | Jerarquización de requerimientos | 5h | 2013-10-03 19:00 | 2013-10-08 20:00 | 31 | 2013-10-03 19:00 | 2013-10-08 20:00 | 5h | 0d | Fernando Raviola; Lucas Ferrero; Oscar Salomón | 15h |
| 33 | 1.3.1.3 | **Análisis/Diseño** | 1.5d | 2013-10-08 20:00 | 2013-10-15 20:00 | 29 | 2013-10-08 20:00 | 2013-10-15 20:00 | 1.5d | 0d |  | 36h |
| 34 | 1.3.1.3.1 | Refinación de Modelo de Casos de Usos | 2h | 2013-10-08 20:00 | 2013-10-09 18:00 |  | 2013-10-08 20:00 | 2013-10-09 18:00 | 2h | 0d | Fernando Raviola; Lucas Ferrero; Oscar Salomón | 6h |
| 35 | 1.3.1.3.2 | Definición preliminar de Diagrama de clases | 10h | 2013-10-09 18:00 | 2013-10-15 20:00 | 34 | 2013-10-09 18:00 | 2013-10-15 20:00 | 10h | 0d | Fernando Raviola; Lucas Ferrero; Oscar Salomón | 30h |
| 36 | 1.3.1.4 | **Implementación** | 2.5d | 2013-10-15 20:00 | 2013-10-31 20:00 | 33 | 2013-10-15 20:00 | 2013-10-31 20:00 | 2.5d | 0d |  | 60h |
| 37 | 1.3.1.4.1 | Desarrollo prototipos independientes de prueba | 20h | 2013-10-15 20:00 | 2013-10-31 20:00 |  | 2013-10-15 20:00 | 2013-10-31 20:00 | 20h | 0d | Fernando Raviola; Lucas Ferrero; Oscar Salomón | 60h |
| 38 | 1.3.1.5 | **Gestión del Proyecto** | 0.25d | 2013-10-31 20:00 | 2013-11-05 18:00 | 36 | 2013-10-31 20:00 | 2013-11-05 18:00 | 0.25d | 0d |  | 6h |
| 39 | 1.3.1.5.1 | Actualización y priorización de Riesgos | 1h | 2013-10-31 20:00 | 2013-10-31 21:00 |  | 2013-10-31 20:00 | 2013-10-31 21:00 | 1h | 0d | Fernando Raviola; Lucas Ferrero; Oscar Salomón | 3h |
| 40 | 1.3.1.5.2 | Refinación del Plan de Proyecto | 1h | 2013-11-05 17:00 | 2013-11-05 18:00 | 39 | 2013-11-05 17:00 | 2013-11-05 18:00 | 1h | 0d | Fernando Raviola; Lucas Ferrero; Oscar Salomón | 3h |
| 41 | 1.3.1.6 | **Gestión de Configuración** | 0.12d | 2013-11-05 18:00 | 2013-11-05 19:00 | 38 | 2013-11-05 18:00 | 2013-11-05 19:00 | 0.12d | 0d |  | 3h |
| 42 | 1.3.1.6.1 | Revisión de versionado de documentos modificados | 1h | 2013-11-05 18:00 | 2013-11-05 19:00 |  | 2013-11-05 18:00 | 2013-11-05 19:00 | 1h | 0d | Fernando Raviola; Lucas Ferrero; Oscar Salomón | 3h |
| 43 | 1.3.1.7 | **Ambiente** | 0.38d | 2013-11-05 19:00 | 2013-11-06 18:00 | 41 | 2013-11-05 19:00 | 2013-11-06 18:00 | 0.38d | 0d |  | 9h |
| 44 | 1.3.1.7.1 | Identificación de Tecnología | 3h | 2013-11-05 19:00 | 2013-11-06 18:00 |  | 2013-11-05 19:00 | 2013-11-06 18:00 | 3h | 0d | Fernando Raviola; Lucas Ferrero; Oscar Salomón | 9h |
| 45 | 1.3.2 | **Iteración E2** | 7.38d | 2013-11-06 18:00 | 2014-02-04 21:00 | 26 | 2013-11-06 18:00 | 2014-02-04 21:00 | 7.38d | 0d |  | 160h |
| 46 | 1.3.2.1 | **Modelo de Negocio** | 0.62d | 2013-11-06 18:00 | 2013-11-07 19:00 |  | 2013-11-06 18:00 | 2013-11-07 19:00 | 0.62d | 0d |  |  |
| 47 | 1.3.2.1.1 | Refinación del Modelo de Negocio | 5h | 2013-11-06 18:00 | 2013-11-07 19:00 |  | 2013-11-06 18:00 | 2013-11-07 19:00 | 5h | 0d |  |  |
| 48 | 1.3.2.2 | **Requerimientos** | 0.5d | 2013-11-07 19:00 | 2013-11-12 19:00 | 46 | 2013-11-07 19:00 | 2013-11-12 19:00 | 0.5d | 0d |  | 10h |
| 49 | 1.3.2.2.1 | Validación de requerimientos | 3h | 2013-11-07 19:00 | 2013-11-12 18:00 |  | 2013-11-07 19:00 | 2013-11-12 18:00 | 3h | 0.12d | Oscar Salomón; Fernando Raviola | 6h |
| 50 | 1.3.2.2.2 | Mapeo de Requerimientos a Casos de Uso | 4h | 2013-11-07 19:00 | 2013-11-12 19:00 |  | 2013-11-07 19:00 | 2013-11-12 19:00 | 4h | 0d | Lucas Ferrero | 4h |

| ID | WBS | Task | Duration | Start | Finish | Predecessors | Baseline start | Baseline finish | Baseline duration | Total slack | Resources | Work |
| --- | --- | --- | --- | --- | --- | --- | --- | --- | --- | --- | --- | --- |
| 51 | 1.3.2.3 | **Análisis/Diseño** | 4.5d | 2013-11-12 19:00 | 2013-12-10 19:00 | 48 | 2013-11-12 19:00 | 2013-12-10 19:00 | 4.5d | 0d |  | 108h |
| 52 | 1.3.2.3.1 | Definición Inicial de diagrama de Clases | 10h | 2013-11-12 19:00 | 2013-11-14 21:00 |  | 2013-11-12 19:00 | 2013-11-14 21:00 | 10h | 0d | Fernando Raviola; Lucas Ferrero; Oscar Salomón | 30h |
| 53 | 1.3.2.3.2 | Definición inicial del Modelo de Datos | 8h | 2013-11-19 17:00 | 2013-11-20 21:00 | 52 | 2013-11-19 17:00 | 2013-11-20 21:00 | 8h | 0d | Fernando Raviola; Lucas Ferrero; Oscar Salomón | 24h |
| 54 | 1.3.2.3.3 | Definición inicial de Diagrama de Actividades | 8h | 2013-11-21 17:00 | 2013-11-26 21:00 | 53 | 2013-11-21 17:00 | 2013-11-26 21:00 | 8h | 0d | Fernando Raviola; Lucas Ferrero; Oscar Salomón | 24h |
| 55 | 1.3.2.3.4 | Definición inicial de Diagramas de Secuencia | 10h | 2013-11-27 17:00 | 2013-12-10 19:00 | 54 | 2013-11-27 17:00 | 2013-12-10 19:00 | 10h | 0d | Fernando Raviola; Lucas Ferrero; Oscar Salomón | 30h |
| 56 | 1.3.2.4 | **Implementación** | 0.75d | 2013-12-10 19:00 | 2013-12-11 21:00 | 51 | 2013-12-10 19:00 | 2013-12-11 21:00 | 0.75d | 0d |  | 18h |
| 57 | 1.3.2.4.1 | Mejoramientos de prototipos | 6h | 2013-12-10 19:00 | 2013-12-11 21:00 |  | 2013-12-10 19:00 | 2013-12-11 21:00 | 6h | 0d | Fernando Raviola; Lucas Ferrero; Oscar Salomón | 18h |
| 58 | 1.3.2.5 | **Gestión del Proyecto** | 0.25d | 2013-12-12 17:00 | 2013-12-12 19:00 | 56 | 2013-12-12 17:00 | 2013-12-12 19:00 | 0.25d | 0d |  | 6h |
| 59 | 1.3.2.5.1 | Validación del Plan de proyecto | 2h | 2013-12-12 17:00 | 2013-12-12 19:00 |  | 2013-12-12 17:00 | 2013-12-12 19:00 | 2h | 0d | Fernando Raviola; Lucas Ferrero; Oscar Salomón | 6h |
| 60 | 1.3.2.6 | **Gestión de Configuración** | 0.12d | 2013-12-12 19:00 | 2013-12-12 20:00 | 58 | 2013-12-12 19:00 | 2013-12-12 20:00 | 0.12d | 0d |  | 3h |
| 61 | 1.3.2.6.1 | Versionado de los prototipos | 1h | 2013-12-12 19:00 | 2013-12-12 20:00 |  | 2013-12-12 19:00 | 2013-12-12 20:00 | 1h | 0d | Oscar Salomón | 1h |
| 62 | 1.3.2.6.2 | Revisión de versionado de documentos modificados | 1h | 2013-12-12 19:00 | 2013-12-12 20:00 |  | 2013-12-12 19:00 | 2013-12-12 20:00 | 1h | 0d | Lucas Ferrero; Fernando Raviola | 2h |
| 63 | 1.3.2.7 | **Ambiente** | 0.62d | 2013-12-12 20:00 | 2014-02-04 21:00 | 60 | 2013-12-12 20:00 | 2014-02-04 21:00 | 0.62d | 0d |  | 15h |
| 64 | 1.3.2.7.1 | Preparación del ambiente de desarrollo | 5h | 2013-12-12 20:00 | 2014-02-04 21:00 |  | 2013-12-12 20:00 | 2014-02-04 21:00 | 5h | 0d | Fernando Raviola; Lucas Ferrero; Oscar Salomón | 15h |
| 65 | 1.3.3 | **Iteración E3** | 4.5d | 2014-02-05 17:00 | 2014-03-19 21:00 | 45 | 2014-02-05 17:00 | 2014-03-19 21:00 | 4.5d | 0d |  | 108h |
| 66 | 1.3.3.1 | **Requerimientos** | 0.38d | 2014-02-05 17:00 | 2014-02-05 20:00 |  | 2014-02-05 17:00 | 2014-02-05 20:00 | 0.38d | 0d |  | 9h |
| 67 | 1.3.3.1.1 | Validacion de Mapeo de Requerimientos a Casos de Uso | 3h | 2014-02-05 17:00 | 2014-02-05 20:00 |  | 2014-02-05 17:00 | 2014-02-05 20:00 | 3h | 0d | Fernando Raviola; Lucas Ferrero; Oscar Salomón | 9h |
| 68 | 1.3.3.2 | **Análisis/Diseño** | 2.75d | 2014-02-05 20:00 | 2014-03-13 18:00 | 66 | 2014-02-05 20:00 | 2014-03-13 18:00 | 2.75d | 0d |  | 66h |
| 69 | 1.3.3.2.1 | Refinación de Diagrama de Casos de Uso | 6h | 2014-02-05 20:00 | 2014-02-26 18:00 |  | 2014-02-05 20:00 | 2014-02-26 18:00 | 6h | 0d | Fernando Raviola; Lucas Ferrero; Oscar Salomón | 18h |
| 70 | 1.3.3.2.2 | Refinación de Diagrama de Clases | 6h | 2014-02-26 18:00 | 2014-02-27 20:00 | 69 | 2014-02-26 18:00 | 2014-02-27 20:00 | 6h | 0d | Fernando Raviola; Lucas Ferrero; Oscar Salomón | 18h |
| 71 | 1.3.3.2.3 | Refinación del Modelo de Datos | 4h | 2014-02-27 20:00 | 2014-03-11 20:00 | 70 | 2014-02-27 20:00 | 2014-03-11 20:00 | 4h | 0d | Fernando Raviola; Lucas Ferrero; Oscar Salomón | 12h |
| 72 | 1.3.3.2.4 | Descripción de casos de uso mas importantes | 6h | 2014-03-11 20:00 | 2014-03-13 18:00 | 71 | 2014-03-11 20:00 | 2014-03-13 18:00 | 6h | 0d | Fernando Raviola; Lucas Ferrero; Oscar Salomón | 18h |
| 73 | 1.3.3.3 | **Implementación** | 1d | 2014-03-13 18:00 | 2014-03-19 18:00 | 68 | 2014-03-13 18:00 | 2014-03-19 18:00 | 1d | 0d |  | 24h |
| 74 | 1.3.3.3.1 | Definición de interfaces de comunicación entre plataformas | 8h | 2014-03-13 18:00 | 2014-03-19 18:00 |  | 2014-03-13 18:00 | 2014-03-19 18:00 | 8h | 0d | Fernando Raviola; Lucas Ferrero; Oscar Salomón | 24h |

| ID | WBS | Task | Type | Duration | Start | Finish | Predecessors | Baseline start | Baseline finish | Baseline duration | Total slack | Resources | Work |
| --- | --- | --- | --- | --- | --- | --- | --- | --- | --- | --- | --- | --- | --- |
| 75 | 1.3.3.4 | **Gestión del Proyecto** |  | 0.25d | 2014-03-19 18:00 | 2014-03-19 20:00 | 73 | 2014-03-19 18:00 | 2014-03-19 20:00 | 0.25d | 0d |  | 6h |
| 76 | 1.3.3.4.1 | Actualización de planes de prevención y contigencia para nuevos Riesgos |  | 2h | 2014-03-19 18:00 | 2014-03-19 20:00 |  | 2014-03-19 18:00 | 2014-03-19 20:00 | 2h | 0d | Fernando Raviola; Lucas Ferrero; Oscar Salomón | 6h |
| 77 | 1.3.3.5 | **Gestión de Configuración** |  | 0.12d | 2014-03-19 20:00 | 2014-03-19 21:00 | 75 | 2014-03-19 20:00 | 2014-03-19 21:00 | 0.12d | 0d |  | 3h |
| 78 | 1.3.3.5.1 | Revisión de versionado de documentos modificados |  | 1h | 2014-03-19 20:00 | 2014-03-19 21:00 |  | 2014-03-19 20:00 | 2014-03-19 21:00 | 1h | 0d | Fernando Raviola; Lucas Ferrero; Oscar Salomón | 3h |
| 79 | 1.4 | Arquitectura del ciclo de vida | milestone | 0h | 2014-03-19 21:00 | 2014-03-19 21:00 | 25 | 2014-03-19 21:00 | 2014-03-19 21:00 |  | 0d |  |  |
| 80 | 1.5 | **CONSTRUCCIÓN** |  | 31.75d | 2014-03-20 17:00 | 2014-08-14 19:00 | 79 | 2014-03-20 17:00 | 2014-08-14 19:00 | 31.75d | 0d |  | 747h |
| 81 | 1.5.1 | **Iteración C1** |  | 3.5d | 2014-03-20 17:00 | 2014-04-03 21:00 |  | 2014-03-20 17:00 | 2014-04-03 21:00 | 3.5d | 0d |  | 84h |
| 82 | 1.5.1.1 | **Análisis/Diseño** |  | 1d | 2014-03-20 17:00 | 2014-03-25 21:00 |  | 2014-03-20 17:00 | 2014-03-25 21:00 | 1d | 0d |  | 24h |
| 83 | 1.5.1.1.1 | Refinación de Diagramas de Actividad |  | 4h | 2014-03-20 17:00 | 2014-03-20 21:00 |  | 2014-03-20 17:00 | 2014-03-20 21:00 | 4h | 0d | Fernando Raviola; Lucas Ferrero; Oscar Salomón | 12h |
| 84 | 1.5.1.1.2 | Refinación de Diagramas de Secuencia |  | 4h | 2014-03-25 17:00 | 2014-03-25 21:00 | 83 | 2014-03-25 17:00 | 2014-03-25 21:00 | 4h | 0d | Fernando Raviola; Lucas Ferrero; Oscar Salomón | 12h |
| 85 | 1.5.1.2 | **Implementación** |  | 1.88d | 2014-03-26 17:00 | 2014-04-02 20:00 | 82 | 2014-03-26 17:00 | 2014-04-02 20:00 | 1.88d | 0d |  | 45h |
| 86 | 1.5.1.2.1 | Construcción de Base de Datos |  | 8h | 2014-03-26 17:00 | 2014-03-27 21:00 |  | 2014-03-26 17:00 | 2014-03-27 21:00 | 8h | 0d | Fernando Raviola; Lucas Ferrero; Oscar Salomón | 24h |
| 87 | 1.5.1.2.2 | Definición de Interfaz de Usuario |  | 7h | 2014-04-01 17:00 | 2014-04-02 20:00 | 86 | 2014-04-01 17:00 | 2014-04-02 20:00 | 7h | 0d | Fernando Raviola; Lucas Ferrero; Oscar Salomón | 21h |
| 88 | 1.5.1.3 | **Gestión del Proyecto** |  | 0.5d | 2014-04-02 20:00 | 2014-04-03 20:00 | 85 | 2014-04-02 20:00 | 2014-04-03 20:00 | 0.5d | 0d |  | 12h |
| 89 | 1.5.1.3.1 | Actualización de Riesgos |  | 1h | 2014-04-02 20:00 | 2014-04-02 21:00 |  | 2014-04-02 20:00 | 2014-04-02 21:00 | 1h | 0d | Fernando Raviola; Lucas Ferrero; Oscar Salomón | 3h |
| 90 | 1.5.1.3.2 | Revisión de planificacion (posible replanificación) |  | 3h | 2014-04-03 17:00 | 2014-04-03 20:00 | 89 | 2014-04-03 17:00 | 2014-04-03 20:00 | 3h | 0d | Fernando Raviola; Lucas Ferrero; Oscar Salomón | 9h |
| 91 | 1.5.1.4 | **Gestión de Configuración** |  | 0.12d | 2014-04-03 20:00 | 2014-04-03 21:00 | 88 | 2014-04-03 20:00 | 2014-04-03 21:00 | 0.12d | 0d |  | 3h |
| 92 | 1.5.1.4.1 | Versionado de prototipos |  | 1h | 2014-04-03 20:00 | 2014-04-03 21:00 |  | 2014-04-03 20:00 | 2014-04-03 21:00 | 1h | 0d | Fernando Raviola | 1h |
| 93 | 1.5.1.4.2 | Revisión de versionado de documentos modificados |  | 1h | 2014-04-03 20:00 | 2014-04-03 21:00 |  | 2014-04-03 20:00 | 2014-04-03 21:00 | 1h | 0d | Oscar Salomón; Lucas Ferrero | 2h |
| 94 | 1.5.2 | **Iteración C2** |  | 5d | 2014-04-08 17:00 | 2014-04-29 21:00 | 81 | 2014-04-08 17:00 | 2014-04-29 21:00 | 5d | 0d |  | 119h |
| 95 | 1.5.2.1 | **Análisis/Diseño** |  | 1.62d | 2014-04-08 17:00 | 2014-04-15 18:00 |  | 2014-04-08 17:00 | 2014-04-15 18:00 | 1.62d | 0d |  | 39h |
| 96 | 1.5.2.1.1 | Definición inicial del Modelo de componentes |  | 9h | 2014-04-08 17:00 | 2014-04-10 18:00 |  | 2014-04-08 17:00 | 2014-04-10 18:00 | 9h | 0d | Fernando Raviola; Lucas Ferrero; Oscar Salomón | 27h |
| 97 | 1.5.2.1.2 | Refinación de Diagramas de clases (agregado de operaciones) |  | 4h | 2014-04-10 18:00 | 2014-04-15 18:00 | 96 | 2014-04-10 18:00 | 2014-04-15 18:00 | 4h | 0d | Fernando Raviola; Lucas Ferrero; Oscar Salomón | 12h |
| 98 | 1.5.2.2 | **Implementación** |  | 2.38d | 2014-04-15 18:00 | 2014-04-23 21:00 | 95 | 2014-04-15 18:00 | 2014-04-23 21:00 | 2.38d | 0d |  | 56h |
| 99 | 1.5.2.2.1 | Codificación de Interfaz de usuario (FrontEnd) |  | 18h | 2014-04-15 18:00 | 2014-04-23 20:00 |  | 2014-04-15 18:00 | 2014-04-23 20:00 | 18h | 0.12d | Oscar Salomón | 18h |
| 100 | 1.5.2.2.2 | Codificación de Interfaz de usuario (BackEnd) |  | 19h | 2014-04-15 18:00 | 2014-04-23 21:00 |  | 2014-04-15 18:00 | 2014-04-23 21:00 | 19h | 0d | Lucas Ferrero | 19h |
| 101 | 1.5.2.2.3 | Codificación de Interfaz de usuario (Android) |  | 19h | 2014-04-15 18:00 | 2014-04-23 21:00 |  | 2014-04-15 18:00 | 2014-04-23 21:00 | 19h | 0d | Fernando Raviola | 19h |

| ID | WBS | Task | Duration | Start | Finish | Predecessors | Baseline start | Baseline finish | Baseline duration | Total slack | Resources | Work |
| --- | --- | --- | --- | --- | --- | --- | --- | --- | --- | --- | --- | --- |
| 102 | 1.5.2.3 | **Gestión del Proyecto** | 0.75d | 2014-04-24 17:00 | 2014-04-29 19:00 | 98 | 2014-04-24 17:00 | 2014-04-29 19:00 | 0.75d | 0d |  | 18h |
| 103 | 1.5.2.3.1 | Actualización de Riesgos | 3h | 2014-04-24 17:00 | 2014-04-24 20:00 |  | 2014-04-24 17:00 | 2014-04-24 20:00 | 3h | 0d | Fernando Raviola; Lucas Ferrero; Oscar Salomón | 9h |
| 104 | 1.5.2.3.2 | Revisión de planificacion (posible replanificación) | 3h | 2014-04-24 20:00 | 2014-04-29 19:00 | 103 | 2014-04-24 20:00 | 2014-04-29 19:00 | 3h | 0d | Fernando Raviola; Lucas Ferrero; Oscar Salomón | 9h |
| 105 | 1.5.2.4 | **Gestión de Configuración** | 0.25d | 2014-04-29 19:00 | 2014-04-29 21:00 | 102 | 2014-04-29 19:00 | 2014-04-29 21:00 | 0.25d | 0d |  | 6h |
| 106 | 1.5.2.4.1 | Versionado de interfaz de usuario | 1h | 2014-04-29 19:00 | 2014-04-29 20:00 |  | 2014-04-29 19:00 | 2014-04-29 20:00 | 1h | 0d | Fernando Raviola; Lucas Ferrero; Oscar Salomón | 3h |
| 107 | 1.5.2.4.2 | Revisión de versionado de documentos modificados | 1h | 2014-04-29 20:00 | 2014-04-29 21:00 | 106 | 2014-04-29 20:00 | 2014-04-29 21:00 | 1h | 0d | Fernando Raviola; Lucas Ferrero; Oscar Salomón | 3h |
| 108 | 1.5.3 | **Iteración C3** | 3.5d | 2014-04-30 17:00 | 2014-05-14 21:00 | 94 | 2014-04-30 17:00 | 2014-05-14 21:00 | 3.5d | 0d |  | 82h |
| 109 | 1.5.3.1 | **Análisis/Diseño** | 0.38d | 2014-04-30 17:00 | 2014-04-30 20:00 |  | 2014-04-30 17:00 | 2014-04-30 20:00 | 0.38d | 0d |  | 9h |
| 110 | 1.5.3.1.1 | Refinación del Modelo de componentes | 3h | 2014-04-30 17:00 | 2014-04-30 20:00 |  | 2014-04-30 17:00 | 2014-04-30 20:00 | 3h | 0d | Fernando Raviola; Lucas Ferrero; Oscar Salomón | 9h |
| 111 | 1.5.3.2 | **Implementación** | 2.62d | 2014-04-30 20:00 | 2014-05-13 21:00 | 109 | 2014-04-30 20:00 | 2014-05-13 21:00 | 2.62d | 0d |  | 61h |
| 112 | 1.5.3.2.1 | Codificacion de logeo de usuario (FrontEnd) | 21h | 2014-04-30 20:00 | 2014-05-13 21:00 |  | 2014-04-30 20:00 | 2014-05-13 21:00 | 21h | 0d | Oscar Salomón | 21h |
| 113 | 1.5.3.2.2 | Codificación de seguridad [Roles y Usuario] (BackEnd) | 20h | 2014-04-30 20:00 | 2014-05-13 20:00 |  | 2014-04-30 20:00 | 2014-05-13 20:00 | 20h | 0.12d | Lucas Ferrero | 20h |
| 114 | 1.5.3.2.3 | Codificación de Local Storage (Android) | 20h | 2014-04-30 20:00 | 2014-05-13 20:00 |  | 2014-04-30 20:00 | 2014-05-13 20:00 | 20h | 0.12d | Fernando Raviola | 20h |
| 115 | 1.5.3.3 | **Gestión del Proyecto** | 0.38d | 2014-05-14 17:00 | 2014-05-14 20:00 | 111 | 2014-05-14 17:00 | 2014-05-14 20:00 | 0.38d | 0d |  | 9h |
| 116 | 1.5.3.3.1 | Actualización de Riesgos | 3h | 2014-05-14 17:00 | 2014-05-14 20:00 |  | 2014-05-14 17:00 | 2014-05-14 20:00 | 3h | 0d | Lucas Ferrero | 3h |
| 117 | 1.5.3.3.2 | Revisión de planificacion (posible replanificación) | 3h | 2014-05-14 17:00 | 2014-05-14 20:00 |  | 2014-05-14 17:00 | 2014-05-14 20:00 | 3h | 0d | Oscar Salomón; Fernando Raviola | 6h |
| 118 | 1.5.3.4 | **Gestión de Configuración** | 0.12d | 2014-05-14 20:00 | 2014-05-14 21:00 | 115 | 2014-05-14 20:00 | 2014-05-14 21:00 | 0.12d | 0d |  | 3h |
| 119 | 1.5.3.4.1 | Versionado de todos los proyectos | 1h | 2014-05-14 20:00 | 2014-05-14 21:00 |  | 2014-05-14 20:00 | 2014-05-14 21:00 | 1h | 0d | Oscar Salomón | 1h |
| 120 | 1.5.3.4.2 | Revisión de versionado de documentos modificados | 1h | 2014-05-14 20:00 | 2014-05-14 21:00 |  | 2014-05-14 20:00 | 2014-05-14 21:00 | 1h | 0d | Lucas Ferrero; Fernando Raviola | 2h |
| 121 | 1.5.4 | **Iteración C4** | 4.38d | 2014-05-15 17:00 | 2014-06-04 20:00 | 108 | 2014-05-15 17:00 | 2014-06-04 20:00 | 4.38d | 0d |  | 101h |
| 122 | 1.5.4.1 | **Análisis/Diseño** | 0.5d | 2014-05-15 17:00 | 2014-05-15 21:00 |  | 2014-05-15 17:00 | 2014-05-15 21:00 | 0.5d | 0d |  | 12h |
| 123 | 1.5.4.1.1 | Refinación del Modelo de Datos | 4h | 2014-05-15 17:00 | 2014-05-15 21:00 |  | 2014-05-15 17:00 | 2014-05-15 21:00 | 4h | 0d | Fernando Raviola; Lucas Ferrero; Oscar Salomón | 12h |
| 124 | 1.5.4.2 | **Implementación** | 3.5d | 2014-05-20 17:00 | 2014-06-03 21:00 | 122 | 2014-05-20 17:00 | 2014-06-03 21:00 | 3.5d | 0d |  | 82h |
| 125 | 1.5.4.2.1 | Codificación de Gestión de reservas online (FrontEnd) | 28h | 2014-05-20 17:00 | 2014-06-03 21:00 |  | 2014-05-20 17:00 | 2014-06-03 21:00 | 28h | 0d | Oscar Salomón | 28h |
| 126 | 1.5.4.2.2 | Codificación de ABM principales (BackEnd) | 26h | 2014-05-20 17:00 | 2014-06-03 19:00 |  | 2014-05-20 17:00 | 2014-06-03 19:00 | 26h | 0.25d | Lucas Ferrero | 26h |
| 127 | 1.5.4.2.3 | Codificación de ABM principales (Android) | 28h | 2014-05-20 17:00 | 2014-06-03 21:00 |  | 2014-05-20 17:00 | 2014-06-03 21:00 | 28h | 0d | Fernando Raviola | 28h |

| ID | WBS | Task | Duration | Start | Finish | Predecessors | Baseline start | Baseline finish | Baseline duration | Total slack | Resources | Work |
| --- | --- | --- | --- | --- | --- | --- | --- | --- | --- | --- | --- | --- |
| 128 | 1.5.4.3 | **Gestión del Proyecto** | 0.25d | 2014-06-04 17:00 | 2014-06-04 19:00 | 124 | 2014-06-04 17:00 | 2014-06-04 19:00 | 0.25d | 0d |  | 4h |
| 129 | 1.5.4.3.1 | Actualización de Riesgos | 2h | 2014-06-04 17:00 | 2014-06-04 19:00 |  | 2014-06-04 17:00 | 2014-06-04 19:00 | 2h | 0d | Fernando Raviola | 2h |
| 130 | 1.5.4.3.2 | Revisión de planificacion (posible replanificación) | 1h | 2014-06-04 17:00 | 2014-06-04 18:00 |  | 2014-06-04 17:00 | 2014-06-04 18:00 | 1h | 0.12d | Lucas Ferrero; Oscar Salomón | 2h |
| 131 | 1.5.4.4 | **Gestión de Configuración** | 0.12d | 2014-06-04 19:00 | 2014-06-04 20:00 | 128 | 2014-06-04 19:00 | 2014-06-04 20:00 | 0.12d | 0d |  | 3h |
| 132 | 1.5.4.4.1 | Versionado de todos los proyectos | 1h | 2014-06-04 19:00 | 2014-06-04 20:00 |  | 2014-06-04 19:00 | 2014-06-04 20:00 | 1h | 0d | Lucas Ferrero | 1h |
| 133 | 1.5.4.4.2 | Revisión de versionado de documentos modificados | 1h | 2014-06-04 19:00 | 2014-06-04 20:00 |  | 2014-06-04 19:00 | 2014-06-04 20:00 | 1h | 0d | Oscar Salomón; Fernando Raviola | 2h |
| 134 | 1.5.5 | **Iteración C5** | 8d | 2014-06-04 20:00 | 2014-07-10 20:00 | 121 | 2014-06-04 20:00 | 2014-07-10 20:00 | 8d | 0d |  | 186h |
| 135 | 1.5.5.1 | **Análisis/Diseño** | 0.75d | 2014-06-04 20:00 | 2014-06-10 18:00 |  | 2014-06-04 20:00 | 2014-06-10 18:00 | 0.75d | 0d |  | 18h |
| 136 | 1.5.5.1.1 | Revisión de Diagramas y Modelos de Análisis/Diseño | 6h | 2014-06-04 20:00 | 2014-06-10 18:00 |  | 2014-06-04 20:00 | 2014-06-10 18:00 | 6h | 0d | Fernando Raviola; Lucas Ferrero; Oscar Salomón | 18h |
| 137 | 1.5.5.2 | **Implementación** | 5.62d | 2014-06-10 18:00 | 2014-07-03 19:00 | 135 | 2014-06-10 18:00 | 2014-07-03 19:00 | 5.62d | 0d |  | 131h |
| 138 | 1.5.5.2.1 | Codificación de Calculos de tiempos de espera (FrontEnd) | 43h | 2014-06-10 18:00 | 2014-07-02 21:00 |  | 2014-06-10 18:00 | 2014-07-02 21:00 | 43h | 0.25d | Oscar Salomón | 43h |
| 139 | 1.5.5.2.2 | Codificación de Funciones básicas (BackEnd) | 43h | 2014-06-10 18:00 | 2014-07-02 21:00 |  | 2014-06-10 18:00 | 2014-07-02 21:00 | 43h | 0.25d | Lucas Ferrero | 43h |
| 140 | 1.5.5.2.3 | Codificación de visualizador de ordenes (Android) | 45h | 2014-06-10 18:00 | 2014-07-03 19:00 |  | 2014-06-10 18:00 | 2014-07-03 19:00 | 45h | 0d | Fernando Raviola | 45h |
| 141 | 1.5.5.3 | **Pruebas** | 1.25d | 2014-07-03 19:00 | 2014-07-09 21:00 | 137 | 2014-07-03 19:00 | 2014-07-09 21:00 | 1.25d | 0d |  | 30h |
| 142 | 1.5.5.3.1 | Pruebas de Funcionalidad (para las 3 aplicaciones) | 10h | 2014-07-03 19:00 | 2014-07-09 21:00 |  | 2014-07-03 19:00 | 2014-07-09 21:00 | 10h | 0d | Fernando Raviola; Lucas Ferrero; Oscar Salomón | 30h |
| 143 | 1.5.5.4 | **Gestión del Proyecto** | 0.25d | 2014-07-10 17:00 | 2014-07-10 19:00 | 141 | 2014-07-10 17:00 | 2014-07-10 19:00 | 0.25d | 0d |  | 4h |
| 144 | 1.5.5.4.1 | Actualización de Riesgos | 2h | 2014-07-10 17:00 | 2014-07-10 19:00 |  | 2014-07-10 17:00 | 2014-07-10 19:00 | 2h | 0d | Oscar Salomón | 2h |
| 145 | 1.5.5.4.2 | Revisión de planificacion (posible replanificación) | 1h | 2014-07-10 17:00 | 2014-07-10 18:00 |  | 2014-07-10 17:00 | 2014-07-10 18:00 | 1h | 0.12d | Lucas Ferrero; Fernando Raviola | 2h |
| 146 | 1.5.5.5 | **Gestión de Configuración** | 0.12d | 2014-07-10 19:00 | 2014-07-10 20:00 | 143 | 2014-07-10 19:00 | 2014-07-10 20:00 | 0.12d | 0d |  | 3h |
| 147 | 1.5.5.5.1 | Versionado de todos los proyectos | 1h | 2014-07-10 19:00 | 2014-07-10 20:00 |  | 2014-07-10 19:00 | 2014-07-10 20:00 | 1h | 0d | Fernando Raviola | 1h |
| 148 | 1.5.5.5.2 | Revisión de versionado de documentos modificados | 1h | 2014-07-10 19:00 | 2014-07-10 20:00 |  | 2014-07-10 19:00 | 2014-07-10 20:00 | 1h | 0d | Oscar Salomón; Lucas Ferrero | 2h |
| 149 | 1.5.6 | **Iteración C6** | 7.38d | 2014-07-10 20:00 | 2014-08-14 19:00 | 134 | 2014-07-10 20:00 | 2014-08-14 19:00 | 7.38d | 0d |  | 175h |
| 150 | 1.5.6.1 | **Análisis/Diseño** | 1d | 2014-07-10 20:00 | 2014-07-16 20:00 |  | 2014-07-10 20:00 | 2014-07-16 20:00 | 1d | 0d |  | 24h |
| 151 | 1.5.6.1.1 | Revisión de Diagramas y Modelos de Análisis/Diseño | 8h | 2014-07-10 20:00 | 2014-07-16 20:00 |  | 2014-07-10 20:00 | 2014-07-16 20:00 | 8h | 0d | Fernando Raviola; Lucas Ferrero; Oscar Salomón | 24h |

| ID | WBS | Task | Type | Duration | Start | Finish | Predecessors | Baseline start | Baseline finish | Baseline duration | Total slack | Resources | Work |
| --- | --- | --- | --- | --- | --- | --- | --- | --- | --- | --- | --- | --- | --- |
| 152 | 1.5.6.2 | **Implementación** |  | 4.75d | 2014-07-16 20:00 | 2014-08-07 18:00 | 150 | 2014-07-16 20:00 | 2014-08-07 18:00 | 4.75d | 0d |  | 112h |
| 153 | 1.5.6.2.1 | Codificación de Calculos de tiempos de espera (FrontEnd) |  | 38h | 2014-07-16 20:00 | 2014-08-07 18:00 |  | 2014-07-16 20:00 | 2014-08-07 18:00 | 38h | 0d | Oscar Salomón | 38h |
| 154 | 1.5.6.2.2 | Codificación de visualizador de Ordenes (BackEnd) |  | 36h | 2014-07-16 20:00 | 2014-08-06 20:00 |  | 2014-07-16 20:00 | 2014-08-06 20:00 | 36h | 0.25d | Lucas Ferrero | 36h |
| 155 | 1.5.6.2.3 | Codificación de personalización gráfica (Android) |  | 38h | 2014-07-16 20:00 | 2014-08-07 18:00 |  | 2014-07-16 20:00 | 2014-08-07 18:00 | 38h | 0d | Fernando Raviola | 38h |
| 156 | 1.5.6.3 | **Pruebas** |  | 1.25d | 2014-08-07 18:00 | 2014-08-13 20:00 | 152 | 2014-08-07 18:00 | 2014-08-13 20:00 | 1.25d | 0d |  | 30h |
| 157 | 1.5.6.3.1 | Pruebas de comunicación de interfaces y pruebas de funcionalidad |  | 10h | 2014-08-07 18:00 | 2014-08-13 20:00 |  | 2014-08-07 18:00 | 2014-08-13 20:00 | 10h | 0d | Fernando Raviola; Lucas Ferrero; Oscar Salomón | 30h |
| 158 | 1.5.6.4 | **Gestión del Proyecto** |  | 0.12d | 2014-08-13 20:00 | 2014-08-13 21:00 | 156 | 2014-08-13 20:00 | 2014-08-13 21:00 | 0.12d | 0d |  | 3h |
| 159 | 1.5.6.4.1 | Actualización de Riesgos |  | 1h | 2014-08-13 20:00 | 2014-08-13 21:00 |  | 2014-08-13 20:00 | 2014-08-13 21:00 | 1h | 0d | Fernando Raviola; Oscar Salomón | 2h |
| 160 | 1.5.6.4.2 | Revisión de planificacion (posible replanificación) |  | 1h | 2014-08-13 20:00 | 2014-08-13 21:00 |  | 2014-08-13 20:00 | 2014-08-13 21:00 | 1h | 0d | Lucas Ferrero | 1h |
| 161 | 1.5.6.5 | **Gestión de Configuración** |  | 0.25d | 2014-08-14 17:00 | 2014-08-14 19:00 | 158 | 2014-08-14 17:00 | 2014-08-14 19:00 | 0.25d | 0d |  | 6h |
| 162 | 1.5.6.5.1 | Versionado de todos los proyectos |  | 2h | 2014-08-14 17:00 | 2014-08-14 19:00 |  | 2014-08-14 17:00 | 2014-08-14 19:00 | 2h | 0d | Oscar Salomón | 2h |
| 163 | 1.5.6.5.2 | Revisión de versionado de documentos modificados |  | 2h | 2014-08-14 17:00 | 2014-08-14 19:00 |  | 2014-08-14 17:00 | 2014-08-14 19:00 | 2h | 0d | Lucas Ferrero; Fernando Raviola | 4h |
| 164 | 1.6 | Capacidad Operacional Inicial | milestone | 0h | 2014-08-14 19:00 | 2014-08-14 19:00 | 80 | 2014-08-14 19:00 | 2014-08-14 19:00 |  | 0d |  |  |
| 165 | 1.7 | **TRANSICIÓN** |  | 7.88d | 2014-08-14 19:00 | 2014-09-23 18:00 | 164 | 2014-08-14 19:00 | 2014-09-23 18:00 | 7.88d | 0d |  | 189h |
| 166 | 1.7.1 | **Iteración T1** |  | 7.88d | 2014-08-14 19:00 | 2014-09-23 18:00 |  | 2014-08-14 19:00 | 2014-09-23 18:00 | 7.88d | 0d |  | 189h |
| 167 | 1.7.1.1 | **Implementación** |  | 2.5d | 2014-08-14 19:00 | 2014-08-27 19:00 |  | 2014-08-14 19:00 | 2014-08-27 19:00 | 2.5d | 0d |  | 60h |
| 168 | 1.7.1.1.1 | Elaboracion de documentación para usuarios y videos tutoriales |  | 20h | 2014-08-14 19:00 | 2014-08-27 19:00 |  | 2014-08-14 19:00 | 2014-08-27 19:00 | 20h | 0d | Fernando Raviola; Lucas Ferrero; Oscar Salomón | 60h |
| 169 | 1.7.1.2 | **Despliegue** |  | 3d | 2014-08-27 19:00 | 2014-09-10 19:00 | 167 | 2014-08-27 19:00 | 2014-09-10 19:00 | 3d | 0d |  | 72h |
| 170 | 1.7.1.2.1 | Modelo de despliegue |  | 10h | 2014-08-27 19:00 | 2014-09-02 21:00 |  | 2014-08-27 19:00 | 2014-09-02 21:00 | 10h | 0d | Fernando Raviola; Lucas Ferrero; Oscar Salomón | 30h |
| 171 | 1.7.1.2.2 | Integración y puesta a punto del sistema |  | 14h | 2014-09-03 17:00 | 2014-09-10 19:00 | 170 | 2014-09-03 17:00 | 2014-09-10 19:00 | 14h | 0d | Fernando Raviola; Lucas Ferrero; Oscar Salomón | 42h |
| 172 | 1.7.1.3 | **Gestión del Proyecto** |  | 2.12d | 2014-09-10 19:00 | 2014-09-18 20:00 | 169 | 2014-09-10 19:00 | 2014-09-18 20:00 | 2.12d | 0d |  | 51h |
| 173 | 1.7.1.3.1 | Actualización de Riesgos |  | 1h | 2014-09-10 19:00 | 2014-09-10 20:00 |  | 2014-09-10 19:00 | 2014-09-10 20:00 | 1h | 0d | Fernando Raviola; Lucas Ferrero; Oscar Salomón | 3h |
| 174 | 1.7.1.3.2 | Revisión de planificacion (posible replanificación) |  | 1h | 2014-09-10 20:00 | 2014-09-10 21:00 | 173 | 2014-09-10 20:00 | 2014-09-10 21:00 | 1h | 0d | Fernando Raviola; Lucas Ferrero; Oscar Salomón | 3h |
| 175 | 1.7.1.3.3 | Análisis de resultados del proyecto |  | 15h | 2014-09-11 17:00 | 2014-09-18 20:00 | 174 | 2014-09-11 17:00 | 2014-09-18 20:00 | 15h | 0d | Fernando Raviola; Lucas Ferrero; Oscar Salomón | 45h |

| ID | WBS | Task | Type | Duration | Start | Finish | Predecessors | Baseline start | Baseline finish | Baseline duration | Total slack | Constraint | Resources | Work |
| --- | --- | --- | --- | --- | --- | --- | --- | --- | --- | --- | --- | --- | --- | --- |
| 176 | 1.7.1.4 | **Gestión de Configuración** |  | 0.25d | 2014-09-18 20:00 | 2014-09-23 18:00 | 172 | 2014-09-18 20:00 | 2014-09-23 18:00 | 0.25d | 0d |  |  | 6h |
| 177 | 1.7.1.4.1 | Versionado de todos los proyectos |  | 2h | 2014-09-18 20:00 | 2014-09-23 18:00 |  | 2014-09-18 20:00 | 2014-09-23 18:00 | 2h | 0d |  | Fernando Raviola | 2h |
| 178 | 1.7.1.4.2 | Revisión de versionado de documentos modificados |  | 2h | 2014-09-18 20:00 | 2014-09-23 18:00 |  | 2014-09-18 20:00 | 2014-09-23 18:00 | 2h | 0d |  | Lucas Ferrero; Oscar Salomón | 4h |
| 179 | 1.8 | Lanzamiento de producto | milestone | 0h | 2014-09-23 18:00 | 2014-09-23 18:00 | 165 | 2014-09-23 18:00 | 2014-09-23 18:00 |  | 0d |  |  |  |
| 180 | 1.9 | Fin de Proyecto | milestone | 0h | 2014-09-23 18:00 | 2014-09-23 18:00 | 179 | 2014-09-23 18:00 | 2014-09-23 18:00 |  | 0d |  |  |  |
| 181 | 1.10 | **Informe de avance mensual** |  | 58d | 2013-08-28 09:00 | 2014-08-27 13:00 |  | 2013-08-28 09:00 | 2014-08-27 13:00 | 58d | 0d |  |  |  |
| 182 | 1.10.1 | Informe de avance mensual 1 | manual | 4h | 2013-08-28 09:00 | 2013-08-28 13:00 |  | 2013-08-28 09:00 | 2013-08-28 13:00 | 4h |  | start no earlier than 2013-08-28 09:00 |  |  |
| 183 | 1.10.2 | Informe de avance mensual 2 | manual | 4h | 2013-09-25 09:00 | 2013-09-25 13:00 |  | 2013-09-25 09:00 | 2013-09-25 13:00 | 4h |  | start no earlier than 2013-09-25 09:00 |  |  |
| 184 | 1.10.3 | Informe de avance mensual 3 | manual | 4h | 2013-10-30 09:00 | 2013-10-30 13:00 |  | 2013-10-30 09:00 | 2013-10-30 13:00 | 4h |  | start no earlier than 2013-10-30 09:00 |  |  |
| 185 | 1.10.4 | Informe de avance mensual 4 | manual | 4h | 2013-11-27 09:00 | 2013-11-27 13:00 |  | 2013-11-27 09:00 | 2013-11-27 13:00 | 4h |  | start no earlier than 2013-11-27 09:00 |  |  |
| 186 | 1.10.5 | Informe de avance mensual 5 | manual | 4h | 2013-12-25 09:00 | 2013-12-25 13:00 |  | 2013-12-25 09:00 | 2013-12-25 13:00 | 4h |  | start no earlier than 2013-12-25 09:00 |  |  |
| 187 | 1.10.6 | Informe de avance mensual 6 | manual | 4h | 2014-01-29 09:00 | 2014-01-29 13:00 |  | 2014-01-29 09:00 | 2014-01-29 13:00 | 4h |  | start no earlier than 2014-01-29 09:00 |  |  |
| 188 | 1.10.7 | Informe de avance mensual 7 | manual | 4h | 2014-02-26 09:00 | 2014-02-26 13:00 |  | 2014-02-26 09:00 | 2014-02-26 13:00 | 4h |  | start no earlier than 2014-02-26 09:00 |  |  |
| 189 | 1.10.8 | Informe de avance mensual 8 | manual | 4h | 2014-03-26 09:00 | 2014-03-26 13:00 |  | 2014-03-26 09:00 | 2014-03-26 13:00 | 4h |  | start no earlier than 2014-03-26 09:00 |  |  |
| 190 | 1.10.9 | Informe de avance mensual 9 | manual | 4h | 2014-04-30 09:00 | 2014-04-30 13:00 |  | 2014-04-30 09:00 | 2014-04-30 13:00 | 4h |  | start no earlier than 2014-04-30 09:00 |  |  |
| 191 | 1.10.10 | Informe de avance mensual 10 | manual | 4h | 2014-05-28 09:00 | 2014-05-28 13:00 |  | 2014-05-28 09:00 | 2014-05-28 13:00 | 4h |  | start no earlier than 2014-05-28 09:00 |  |  |
| 192 | 1.10.11 | Informe de avance mensual 11 | manual | 4h | 2014-06-25 09:00 | 2014-06-25 13:00 |  | 2014-06-25 09:00 | 2014-06-25 13:00 | 4h |  | start no earlier than 2014-06-25 09:00 |  |  |
| 193 | 1.10.12 | Informe de avance mensual 12 | manual | 4h | 2014-07-30 09:00 | 2014-07-30 13:00 |  | 2014-07-30 09:00 | 2014-07-30 13:00 | 4h |  | start no earlier than 2014-07-30 09:00 |  |  |
| 194 | 1.10.13 | Informe de avance mensual 13 | manual | 4h | 2014-08-27 09:00 | 2014-08-27 13:00 |  | 2014-08-27 09:00 | 2014-08-27 13:00 | 4h |  | start no earlier than 2014-08-27 09:00 |  |  |
