# Planificación RestApp(HASTA PRIMER INFORME)

Schedule from MS Project, 2013-07-29 to 2014-10-17, A marks actual dates.
Privada

## Calendars

- Tesis: Mon 16:00-20:00; Tue 16:00-18:30; Wed off; Thu 17:00-19:00; Fri 16:00-20:00; Sat-Sun off. Exceptions (off unless hours are given): 2013-08-19 (Feriado), 2013-08-21 to 2013-08-23 (Congreso De Sistema), 2013-09-09 to 2013-09-13 (Fecha de examen), 2013-10-14 (Feriado), 2013-10-21 to 2013-10-25 (Fecha de examen), 2013-11-25 (Feriado), 2013-12-02 to 2013-12-06 (Fecha de examen), 2013-12-16 to 2013-12-20 (Fecha de examen), 2013-12-23 to 2013-12-27 (Semana de navidad), 2013-12-30 to 2014-01-03 (Semana de año nuevo), 2014-01-06 to 2014-01-31 (Vacaciones), 2014-02-10 to 2014-02-14 (Fecha de examen), 2014-02-17 to 2014-02-25 (Fecha de examen), 2014-03-03 to 2014-03-07 (Fecha de examen).

## Resources

| Resource |
| --- |
| Lucas Ferrero |
| Oscar Salomón |
| Fernando Raviola |

## Schedule

| ID | WBS | Task | Type | Duration | Start | Finish | Predecessors | Complete | Remaining | Baseline start | Baseline finish | Baseline duration | Total slack | Resources | Work | Actual work |
| --- | --- | --- | --- | --- | --- | --- | --- | --- | --- | --- | --- | --- | --- | --- | --- | --- |
| 1 | 1 | **RestApp** |  | 76.5d | 2013-07-29 A | 2014-10-17 |  | 14% | 65.44d | 2013-07-29 | 2014-10-28 | 78.75d | 0d |  | 1763h | 372h |
| 2 | 1.1 | **INICIO** |  | 10.38d | 2013-07-29 A | 2013-09-24 A |  | 100% |  | 2013-07-29 | 2013-10-04 | 12.38d |  |  | 213h | 213h |
| 3 | 1.1.1 | **Iteración I1** |  | 10.38d | 2013-07-29 A | 2013-09-24 A |  | 100% |  | 2013-07-29 | 2013-10-04 | 12.38d |  |  | 213h | 213h |
| 4 | 1.1.1.1 | **Modelo de Negocio** |  | 1.12d | 2013-07-29 A | 2013-08-02 A |  | 100% |  | 2013-07-29 | 2013-08-05 | 1.88d |  |  | 27h | 27h |
| 5 | 1.1.1.1.1 | Analisis del dominio del problema |  | 4h | 2013-07-29 A | 2013-07-29 A |  | 100% |  | 2013-07-29 | 2013-07-30 | 6h |  | Fernando Raviola; Lucas Ferrero; Oscar Salomón | 12h | 12h |
| 6 | 1.1.1.1.2 | Confección de entrevista |  | 2h | 2013-07-30 A | 2013-07-30 A | 5 | 100% |  | 2013-07-30 | 2013-08-01 | 2h |  | Fernando Raviola; Lucas Ferrero; Oscar Salomón | 6h | 6h |
| 7 | 1.1.1.1.3 | Realización de entrevista |  | 1h | 2013-07-30 A | 2013-08-01 A | 6 | 100% |  | 2013-08-01 | 2013-08-02 | 3h |  | Fernando Raviola; Lucas Ferrero; Oscar Salomón | 3h | 3h |
| 8 | 1.1.1.1.4 | Analisis de Entrevista |  | 2h | 2013-08-01 A | 2013-08-02 A | 7 | 100% |  | 2013-08-02 | 2013-08-05 | 4h |  | Fernando Raviola; Lucas Ferrero; Oscar Salomón | 6h | 6h |
| 9 | 1.1.1.2 | **Requerimientos** |  | 1.75d | 2013-08-02 A | 2013-08-09 A | 4 | 100% |  | 2013-08-05 | 2013-08-16 | 2.75d |  |  | 18h | 18h |
| 10 | 1.1.1.2.1 | Definición de caracteristicas y limitaciones |  | 6h | 2013-08-02 A | 2013-08-05 A |  | 100% |  | 2013-08-05 | 2013-08-09 | 7h |  | Fernando Raviola; Lucas Ferrero; Oscar Salomón | 18h | 18h |
| 11 | 1.1.1.2.2 | Definición de Requerimientos Funcionales y No Funcionales |  | 8h | 2013-08-05 A | 2013-08-09 A | 10 | 100% |  | 2013-08-09 | 2013-08-16 | 15h |  |  |  |  |
| 12 | 1.1.1.3 | **Análisis/Diseño** |  | 0.75d | 2013-08-09 A | 2013-08-12 A | 9 | 100% |  | 2013-08-16 | 2013-08-27 | 1d |  |  | 18h | 18h |
| 13 | 1.1.1.3.1 | Definición inicial del Modelo de Casos de Usos |  | 6h | 2013-08-09 A | 2013-08-12 A |  | 100% |  | 2013-08-16 | 2013-08-27 | 8h |  | Fernando Raviola; Lucas Ferrero; Oscar Salomón | 18h | 18h |
| 14 | 1.1.1.4 | **Gestión del Proyecto** |  | 5.25d | 2013-08-13 A | 2013-09-17 A | 12 | 100% |  | 2013-08-27 | 2013-09-26 | 5.12d |  |  | 114h | 114h |
| 15 | 1.1.1.4.1 | Estudio de prefactibilidad |  | 8h | 2013-08-13 A | 2013-08-16 A |  | 100% |  | 2013-08-27 | 2013-09-02 | 8h |  | Fernando Raviola; Lucas Ferrero; Oscar Salomón | 24h | 24h |
| 16 | 1.1.1.4.2 | Planificación |  | 18h | 2013-08-16 A | 2013-09-02 A | 15 | 100% |  | 2013-09-02 | 2013-09-16 | 15h |  | Fernando Raviola; Lucas Ferrero; Oscar Salomón | 54h | 54h |
| 17 | 1.1.1.4.3 | Gestión de riesgos (definición) |  | 6h | 2013-09-02 A | 2013-09-05 A | 16 | 100% |  | 2013-09-16 | 2013-09-20 | 8h |  | Fernando Raviola; Lucas Ferrero; Oscar Salomón | 18h | 18h |
| 18 | 1.1.1.4.4 | Gestión de configuración (definición) |  | 6h | 2013-09-06 A | 2013-09-16 A | 17 | 100% |  | 2013-09-20 | 2013-09-26 | 10h |  | Fernando Raviola; Lucas Ferrero; Oscar Salomón | 18h | 18h |
| 19 | 1.1.1.4.5 | Presentación Inicial |  | 4h | 2013-09-16 A | 2013-09-17 A | 18 | 100% |  |  |  |  |  |  |  |  |
| 20 | 1.1.1.5 | **Gestión de configuración** |  | 1d | 2013-09-17 A | 2013-09-23 A | 14 | 100% |  | 2013-09-27 | 2013-09-30 | 1d |  |  | 24h | 24h |
| 21 | 1.1.1.5.1 | Preparación del ambiente de versionado |  | 8h | 2013-09-17 A | 2013-09-23 A |  | 100% |  | 2013-09-27 | 2013-09-30 | 8h |  | Fernando Raviola; Lucas Ferrero; Oscar Salomón | 24h | 24h |
| 22 | 1.1.1.6 | **Ambiente** |  | 0.5d | 2013-09-23 A | 2013-09-24 A | 20 | 100% |  | 2013-10-01 | 2013-10-04 | 0.62d |  |  | 12h | 12h |
| 23 | 1.1.1.6.1 | Identificación y evaluación de herramientas |  | 4h | 2013-09-23 A | 2013-09-24 A |  | 100% |  | 2013-10-01 | 2013-10-04 | 5h |  | Fernando Raviola; Lucas Ferrero; Oscar Salomón | 12h | 12h |
| 24 | 1.2 | Objetivos del ciclo de vida | milestone | 0h | 2013-09-24 A | 2013-09-24 A | 2 | 100% |  | 2013-10-04 | 2013-10-04 | 0h |  |  |  |  |

| ID | WBS | Task | Duration | Start | Finish | Predecessors | Complete | Remaining | Baseline start | Baseline finish | Baseline duration | Total slack | Resources | Work | Actual work |
| --- | --- | --- | --- | --- | --- | --- | --- | --- | --- | --- | --- | --- | --- | --- | --- |
| 25 | 1.3 | **ELABORACIÓN** | 20.5d | 2013-09-24 A | 2014-03-28 | 24 | 32% | 14.03d | 2013-10-04 | 2014-04-07 | 20.75d | 0d |  | 490h | 159h |
| 26 | 1.3.1 | **Iteración E1** | 7.62d | 2013-09-24 A | 2013-11-07 |  | 87% | 1d | 2013-10-04 | 2013-11-18 | 7.88d | 0d |  | 183h | 159h |
| 27 | 1.3.1.1 | **Modelo de Negocio** | 0.88d | 2013-09-24 A | 2013-09-27 A |  | 100% |  | 2013-10-04 | 2013-10-08 | 1.25d |  |  | 21h | 21h |
| 28 | 1.3.1.1.1 | Entendimiento del Modelo de Negocio | 7h | 2013-09-24 A | 2013-09-27 A |  | 100% |  | 2013-10-04 | 2013-10-08 | 10h |  | Fernando Raviola; Lucas Ferrero; Oscar Salomón | 21h | 21h |
| 29 | 1.3.1.2 | **Requerimientos** | 1.5d | 2013-09-30 A | 2013-10-04 A | 27 | 100% |  | 2013-10-10 | 2013-10-18 | 1.38d |  |  | 36h | 36h |
| 30 | 1.3.1.2.1 | Definicón de nuevos requerimientos | 2h | 2013-09-30 A | 2013-09-30 A |  | 100% |  | 2013-10-10 | 2013-10-11 | 4h |  | Fernando Raviola; Lucas Ferrero; Oscar Salomón | 6h | 6h |
| 31 | 1.3.1.2.2 | Documentación de requerimientos según estandar | 5h | 2013-09-30 A | 2013-10-03 A | 30 | 100% |  | 2013-10-11 | 2013-10-15 | 3h |  | Fernando Raviola; Lucas Ferrero; Oscar Salomón | 15h | 15h |
| 32 | 1.3.1.2.3 | Jerarquización de requerimientos | 5h | 2013-10-03 A | 2013-10-04 A | 31 | 100% |  | 2013-10-15 | 2013-10-18 | 4h |  | Fernando Raviola; Lucas Ferrero; Oscar Salomón | 15h | 15h |
| 33 | 1.3.1.3 | **Análisis/Diseño** | 1.5d | 2013-10-04 A | 2013-10-11 A | 29 | 100% |  | 2013-10-18 | 2013-11-04 | 2.25d |  |  | 36h | 36h |
| 34 | 1.3.1.3.1 | Refinación de Modelo de Casos de Usos | 2h | 2013-10-04 A | 2013-10-07 A |  | 100% |  | 2013-10-18 | 2013-10-18 | 3h |  | Fernando Raviola; Lucas Ferrero; Oscar Salomón | 6h | 6h |
| 35 | 1.3.1.3.2 | Definición preliminar de Diagrama de clases | 10h | 2013-10-07 A | 2013-10-11 A | 34 | 100% |  | 2013-10-18 | 2013-11-04 | 15h |  | Fernando Raviola; Lucas Ferrero; Oscar Salomón | 30h | 30h |
| 36 | 1.3.1.4 | **Implementación** | 2.5d | 2013-10-11 A | 2013-11-01 A | 33 | 100% |  | 2013-11-04 | 2013-11-08 | 1d |  |  | 60h | 60h |
| 37 | 1.3.1.4.1 | Desarrollo prototipos independientes de prueba | 20h | 2013-10-11 A | 2013-11-01 A |  | 100% |  | 2013-11-04 | 2013-11-08 | 8h |  | Fernando Raviola; Lucas Ferrero; Oscar Salomón | 60h | 60h |
| 38 | 1.3.1.5 | **Gestión del Proyecto** | 0.75d | 2013-11-01 A | 2013-11-04 | 36 | 33% | 0.5d | 2013-11-08 | 2013-11-14 | 1.38d | 0d |  | 18h | 6h |
| 39 | 1.3.1.5.1 | Actualización y priorización de Riesgos | 1h | 2013-11-01 A | 2013-11-01 A |  | 100% |  | 2013-11-08 | 2013-11-11 | 4h |  | Fernando Raviola; Lucas Ferrero; Oscar Salomón | 3h | 3h |
| 40 | 1.3.1.5.2 | Refinación del Plan de Proyecto | 1h | 2013-11-01 A | 2013-11-01 A | 39 | 100% |  | 2013-11-11 | 2013-11-12 | 3h |  | Fernando Raviola; Lucas Ferrero; Oscar Salomón | 3h | 3h |
| 41 | 1.3.1.5.3 | Generación de Informe #1 | 4h | 2013-11-04 | 2013-11-04 | 40 |  |  | 2013-11-12 | 2013-11-14 | 4h | 0d | Fernando Raviola; Lucas Ferrero; Oscar Salomón | 12h |  |
| 42 | 1.3.1.6 | **Gestión de Configuración** | 0.12d | 2013-11-05 | 2013-11-05 | 38 |  |  | 2013-11-15 | 2013-11-15 | 0.25d | 0d |  | 3h |  |
| 43 | 1.3.1.6.1 | Revisión de versionado de documentos modificados | 1h | 2013-11-05 | 2013-11-05 |  |  |  | 2013-11-15 | 2013-11-15 | 1h | 0d | Fernando Raviola; Lucas Ferrero; Oscar Salomón | 3h |  |
| 44 | 1.3.1.7 | **Ambiente** | 0.38d | 2013-11-05 | 2013-11-07 | 42 |  |  | 2013-11-15 | 2013-11-18 | 0.38d | 0d |  | 9h |  |
| 45 | 1.3.1.7.1 | Identificación de Tecnología | 3h | 2013-11-05 | 2013-11-07 |  |  |  | 2013-11-15 | 2013-11-18 | 3h | 0d | Fernando Raviola; Lucas Ferrero; Oscar Salomón | 9h |  |
| 46 | 1.3.2 | **Iteración E2** | 7.88d | 2013-11-07 | 2014-02-07 | 26 |  |  | 2013-11-18 | 2014-03-14 | 7.88d | 0d |  | 187h |  |
| 47 | 1.3.2.1 | **Modelo de Negocio** | 0.62d | 2013-11-07 | 2013-11-11 |  |  |  | 2013-11-18 | 2013-11-19 | 0.62d | 0d |  | 15h |  |
| 48 | 1.3.2.1.1 | Refinación del Modelo de Negocio | 5h | 2013-11-07 | 2013-11-11 |  |  |  | 2013-11-18 | 2013-11-19 | 5h | 0d | Fernando Raviola; Lucas Ferrero; Oscar Salomón | 15h |  |

| ID | WBS | Task | Duration | Start | Finish | Predecessors | Baseline start | Baseline finish | Baseline duration | Total slack | Resources | Work |
| --- | --- | --- | --- | --- | --- | --- | --- | --- | --- | --- | --- | --- |
| 49 | 1.3.2.2 | **Requerimientos** | 0.5d | 2013-11-11 | 2013-11-12 | 47 | 2013-11-19 | 2013-11-22 | 0.5d | 0d |  | 10h |
| 50 | 1.3.2.2.1 | Validación de requerimientos | 3h | 2013-11-11 | 2013-11-11 |  | 2013-11-19 | 2013-11-22 | 3h | 0.12d | Fernando Raviola; Oscar Salomón | 6h |
| 51 | 1.3.2.2.2 | Mapeo de Requerimientos a Casos de Uso | 4h | 2013-11-11 | 2013-11-12 |  | 2013-11-19 | 2013-11-22 | 4h | 0d | Lucas Ferrero | 4h |
| 52 | 1.3.2.3 | **Análisis/Diseño** | 4.5d | 2013-11-12 | 2013-12-12 | 49 | 2013-11-22 | 2014-02-07 | 4.5d | 0d |  | 108h |
| 53 | 1.3.2.3.1 | Definición Inicial de diagrama de Clases | 10h | 2013-11-12 | 2013-11-18 |  | 2013-11-22 | 2013-11-29 | 10h | 0d | Fernando Raviola; Lucas Ferrero; Oscar Salomón | 30h |
| 54 | 1.3.2.3.2 | Definición inicial del Modelo de Datos | 8h | 2013-11-18 | 2013-11-22 | 53 | 2013-11-29 | 2013-12-12 | 8h | 0d | Fernando Raviola; Lucas Ferrero; Oscar Salomón | 24h |
| 55 | 1.3.2.3.3 | Definición inicial de Diagrama de Actividades | 8h | 2013-11-22 | 2013-11-29 | 54 | 2013-12-12 | 2014-02-03 | 8h | 0d | Fernando Raviola; Lucas Ferrero; Oscar Salomón | 24h |
| 56 | 1.3.2.3.4 | Definición inicial de Diagramas de Secuencia | 10h | 2013-11-29 | 2013-12-12 | 55 | 2014-02-03 | 2014-02-07 | 10h | 0d | Fernando Raviola; Lucas Ferrero; Oscar Salomón | 30h |
| 57 | 1.3.2.4 | **Implementación** | 0.75d | 2013-12-12 | 2014-02-03 | 52 | 2014-02-27 | 2014-02-28 | 0.75d | 0d |  | 18h |
| 58 | 1.3.2.4.1 | Mejoramientos de prototipos | 6h | 2013-12-12 | 2014-02-03 |  | 2014-02-27 | 2014-02-28 | 6h | 0d | Fernando Raviola; Lucas Ferrero; Oscar Salomón | 18h |
| 59 | 1.3.2.5 | **Gestión del Proyecto** | 0.75d | 2014-02-03 | 2014-02-04 | 57 | 2014-03-10 | 2014-03-11 | 0.75d | 0d |  | 18h |
| 60 | 1.3.2.5.1 | Validación del Plan de proyecto | 2h | 2014-02-03 | 2014-02-03 |  | 2014-03-10 | 2014-03-10 | 2h | 0d | Fernando Raviola; Lucas Ferrero; Oscar Salomón | 6h |
| 61 | 1.3.2.5.2 | Generación de Informe #2 | 4h | 2014-02-03 | 2014-02-04 | 60 | 2014-03-10 | 2014-03-11 | 4h | 0d | Fernando Raviola; Lucas Ferrero; Oscar Salomón | 12h |
| 62 | 1.3.2.6 | **Gestión de Configuración** | 0.12d | 2014-02-06 | 2014-02-06 | 59 | 2014-03-11 | 2014-03-13 | 0.12d | 0d |  | 3h |
| 63 | 1.3.2.6.1 | Versionado de los prototipos | 1h | 2014-02-06 | 2014-02-06 |  | 2014-03-11 | 2014-03-13 | 1h | 0d | Oscar Salomón | 1h |
| 64 | 1.3.2.6.2 | Revisión de versionado de documentos modificados | 1h | 2014-02-06 | 2014-02-06 |  | 2014-03-11 | 2014-03-13 | 1h | 0d | Fernando Raviola; Lucas Ferrero | 2h |
| 65 | 1.3.2.7 | **Ambiente** | 0.62d | 2014-02-06 | 2014-02-07 | 62 | 2014-03-13 | 2014-03-14 | 0.62d | 0d |  | 15h |
| 66 | 1.3.2.7.1 | Preparación del ambiente de desarrollo | 5h | 2014-02-06 | 2014-02-07 |  | 2014-03-13 | 2014-03-14 | 5h | 0d | Fernando Raviola; Lucas Ferrero; Oscar Salomón | 15h |
| 67 | 1.3.3 | **Iteración E3** | 5d | 2014-02-27 | 2014-03-28 | 46 | 2014-03-14 | 2014-04-07 | 5d | 0d |  | 120h |
| 68 | 1.3.3.1 | **Requerimientos** | 0.38d | 2014-02-27 | 2014-02-28 |  | 2014-03-14 | 2014-03-17 | 0.38d | 0d |  | 9h |
| 69 | 1.3.3.1.1 | Validacion de Mapeo de Requerimientos a Casos de Uso | 3h | 2014-02-27 | 2014-02-28 |  | 2014-03-14 | 2014-03-17 | 3h | 0d | Fernando Raviola; Lucas Ferrero; Oscar Salomón | 9h |
| 70 | 1.3.3.2 | **Análisis/Diseño** | 2.75d | 2014-02-28 | 2014-03-18 | 68 | 2014-03-17 | 2014-03-28 | 2.75d | 0d |  | 66h |
| 71 | 1.3.3.2.1 | Refinación de Diagrama de Casos de Uso | 6h | 2014-02-28 | 2014-03-10 |  | 2014-03-17 | 2014-03-20 | 6h | 0d | Fernando Raviola; Lucas Ferrero; Oscar Salomón | 18h |
| 72 | 1.3.3.2.2 | Refinación de Diagrama de Clases | 6h | 2014-03-10 | 2014-03-14 | 71 | 2014-03-21 | 2014-03-24 | 6h | 0d | Fernando Raviola; Lucas Ferrero; Oscar Salomón | 18h |
| 73 | 1.3.3.2.3 | Refinación del Modelo de Datos | 4h | 2014-03-14 | 2014-03-17 | 72 | 2014-03-24 | 2014-03-25 | 4h | 0d | Fernando Raviola; Lucas Ferrero; Oscar Salomón | 12h |
| 74 | 1.3.3.2.4 | Descripción de casos de uso mas importantes | 6h | 2014-03-17 | 2014-03-18 | 73 | 2014-03-25 | 2014-03-28 | 6h | 0d | Fernando Raviola; Lucas Ferrero; Oscar Salomón | 18h |

| ID | WBS | Task | Type | Duration | Start | Finish | Predecessors | Baseline start | Baseline finish | Baseline duration | Total slack | Resources | Work |
| --- | --- | --- | --- | --- | --- | --- | --- | --- | --- | --- | --- | --- | --- |
| 75 | 1.3.3.3 | **Implementación** |  | 1d | 2014-03-20 | 2014-03-24 | 70 | 2014-03-28 | 2014-04-03 | 1d | 0d |  | 24h |
| 76 | 1.3.3.3.1 | Definición de interfaces de comunicación entre plataformas |  | 8h | 2014-03-20 | 2014-03-24 |  | 2014-03-28 | 2014-04-03 | 8h | 0d | Fernando Raviola; Lucas Ferrero; Oscar Salomón | 24h |
| 77 | 1.3.3.4 | **Gestión del Proyecto** |  | 0.75d | 2014-03-24 | 2014-03-27 | 75 | 2014-04-03 | 2014-04-07 | 0.75d | 0d |  | 18h |
| 78 | 1.3.3.4.1 | Actualización de planes de prevención y contigencia para nuevos Riesgos |  | 2h | 2014-03-24 | 2014-03-24 |  | 2014-04-03 | 2014-04-04 | 2h | 0d | Fernando Raviola; Lucas Ferrero; Oscar Salomón | 6h |
| 79 | 1.3.3.4.2 | Generación de Informe #3 |  | 4h | 2014-03-25 | 2014-03-27 | 78 | 2014-04-04 | 2014-04-07 | 4h | 0d | Fernando Raviola; Lucas Ferrero; Oscar Salomón | 12h |
| 80 | 1.3.3.5 | **Gestión de Configuración** |  | 0.12d | 2014-03-27 | 2014-03-28 | 77 | 2014-04-07 | 2014-04-07 | 0.12d | 0d |  | 3h |
| 81 | 1.3.3.5.1 | Revisión de versionado de documentos modificados |  | 1h | 2014-03-27 | 2014-03-28 |  | 2014-04-07 | 2014-04-07 | 1h | 0d | Fernando Raviola; Lucas Ferrero; Oscar Salomón | 3h |
| 82 | 1.4 | Arquitectura del ciclo de vida | milestone | 0h | 2014-03-28 | 2014-03-28 | 25 | 2014-04-07 | 2014-04-07 | 0h | 0d |  |  |
| 83 | 1.5 | **CONSTRUCCIÓN** |  | 37.25d | 2014-03-28 | 2014-09-11 | 82 | 2014-04-07 | 2014-09-19 | 37.25d | 0d |  | 859h |
| 84 | 1.5.1 | **Iteración C1** |  | 4d | 2014-03-28 | 2014-04-14 |  | 2014-04-07 | 2014-04-25 | 4d | 0d |  | 96h |
| 85 | 1.5.1.1 | **Análisis/Diseño** |  | 1d | 2014-03-28 | 2014-04-01 |  | 2014-04-07 | 2014-04-11 | 1d | 0d |  | 24h |
| 86 | 1.5.1.1.1 | Refinación de Diagramas de Actividad |  | 4h | 2014-03-28 | 2014-03-31 |  | 2014-04-07 | 2014-04-08 | 4h | 0d | Fernando Raviola; Lucas Ferrero; Oscar Salomón | 12h |
| 87 | 1.5.1.1.2 | Refinación de Diagramas de Secuencia |  | 4h | 2014-03-31 | 2014-04-01 | 86 | 2014-04-08 | 2014-04-11 | 4h | 0d | Fernando Raviola; Lucas Ferrero; Oscar Salomón | 12h |
| 88 | 1.5.1.2 | **Implementación** |  | 1.88d | 2014-04-01 | 2014-04-10 | 85 | 2014-04-11 | 2014-04-18 | 1.88d | 0d |  | 45h |
| 89 | 1.5.1.2.1 | Construcción de Base de Datos |  | 8h | 2014-04-01 | 2014-04-04 |  | 2014-04-11 | 2014-04-15 | 8h | 0d | Fernando Raviola; Lucas Ferrero; Oscar Salomón | 24h |
| 90 | 1.5.1.2.2 | Definición de Interfaz de Usuario |  | 7h | 2014-04-07 | 2014-04-10 | 89 | 2014-04-15 | 2014-04-18 | 7h | 0d | Fernando Raviola; Lucas Ferrero; Oscar Salomón | 21h |
| 91 | 1.5.1.3 | **Gestión del Proyecto** |  | 1d | 2014-04-10 | 2014-04-14 | 88 | 2014-04-21 | 2014-04-24 | 1d | 0d |  | 24h |
| 92 | 1.5.1.3.1 | Actualización de Riesgos |  | 1h | 2014-04-10 | 2014-04-10 |  | 2014-04-21 | 2014-04-21 | 1h | 0d | Fernando Raviola; Lucas Ferrero; Oscar Salomón | 3h |
| 93 | 1.5.1.3.2 | Revisión de planificacion (posible replanificación) |  | 3h | 2014-04-10 | 2014-04-11 | 92 | 2014-04-21 | 2014-04-21 | 3h | 0d | Fernando Raviola; Lucas Ferrero; Oscar Salomón | 9h |
| 94 | 1.5.1.3.3 | Generación de Informe #4 |  | 4h | 2014-04-11 | 2014-04-14 | 93 | 2014-04-22 | 2014-04-24 | 4h | 0d | Fernando Raviola; Lucas Ferrero; Oscar Salomón | 12h |
| 95 | 1.5.1.4 | **Gestión de Configuración** |  | 0.12d | 2014-04-14 | 2014-04-14 | 91 | 2014-04-24 | 2014-04-25 | 0.12d | 0d |  | 3h |
| 96 | 1.5.1.4.1 | Versionado de prototipos |  | 1h | 2014-04-14 | 2014-04-14 |  | 2014-04-24 | 2014-04-25 | 1h | 0d | Fernando Raviola | 1h |
| 97 | 1.5.1.4.2 | Revisión de versionado de documentos modificados |  | 1h | 2014-04-14 | 2014-04-14 |  | 2014-04-24 | 2014-04-25 | 1h | 0d | Lucas Ferrero; Oscar Salomón | 2h |
| 98 | 1.5.2 | **Iteración C2** |  | 6.25d | 2014-04-14 | 2014-05-12 | 84 | 2014-04-25 | 2014-05-23 | 6.25d | 0d |  | 145h |
| 99 | 1.5.2.1 | **Análisis/Diseño** |  | 1.62d | 2014-04-14 | 2014-04-21 |  | 2014-04-25 | 2014-05-02 | 1.62d | 0d |  | 39h |
| 100 | 1.5.2.1.1 | Definición inicial del Modelo de componentes |  | 9h | 2014-04-14 | 2014-04-18 |  | 2014-04-25 | 2014-04-29 | 9h | 0d | Fernando Raviola; Lucas Ferrero; Oscar Salomón | 27h |
| 101 | 1.5.2.1.2 | Refinación de Diagramas de clases (agregado de operaciones) |  | 4h | 2014-04-21 | 2014-04-21 | 100 | 2014-04-29 | 2014-05-02 | 4h | 0d | Fernando Raviola; Lucas Ferrero; Oscar Salomón | 12h |

| ID | WBS | Task | Duration | Start | Finish | Predecessors | Baseline start | Baseline finish | Baseline duration | Total slack | Resources | Work |
| --- | --- | --- | --- | --- | --- | --- | --- | --- | --- | --- | --- | --- |
| 102 | 1.5.2.2 | **Implementación** | 3.12d | 2014-04-22 | 2014-05-05 | 99 | 2014-05-02 | 2014-05-16 | 3.12d | 0d |  | 70h |
| 103 | 1.5.2.2.1 | Codificación de Interfaz de usuario (FrontEnd) | 25h | 2014-04-22 | 2014-05-05 |  | 2014-05-02 | 2014-05-16 | 25h | 0d | Oscar Salomón | 25h |
| 104 | 1.5.2.2.2 | Codificación de Interfaz de usuario (BackEnd) | 22h | 2014-04-22 | 2014-05-05 |  | 2014-05-02 | 2014-05-13 | 22h | 0.38d | Lucas Ferrero | 22h |
| 105 | 1.5.2.2.3 | Codificación de Interfaz de usuario (Android) | 23h | 2014-04-22 | 2014-05-05 |  | 2014-05-02 | 2014-05-15 | 23h | 0.25d | Fernando Raviola | 23h |
| 106 | 1.5.2.3 | **Gestión del Proyecto** | 1.25d | 2014-05-06 | 2014-05-12 | 102 | 2014-05-16 | 2014-05-22 | 1.25d | 0d |  | 30h |
| 107 | 1.5.2.3.1 | Actualización de Riesgos | 3h | 2014-05-06 | 2014-05-08 |  | 2014-05-16 | 2014-05-16 | 3h | 0d | Fernando Raviola; Lucas Ferrero; Oscar Salomón | 9h |
| 108 | 1.5.2.3.2 | Revisión de planificacion (posible replanificación) | 3h | 2014-05-08 | 2014-05-09 | 107 | 2014-05-19 | 2014-05-19 | 3h | 0d | Fernando Raviola; Lucas Ferrero; Oscar Salomón | 9h |
| 109 | 1.5.2.3.3 | Generación de Informe #5 | 4h | 2014-05-09 | 2014-05-12 | 108 | 2014-05-19 | 2014-05-22 | 4h | 0d | Fernando Raviola; Lucas Ferrero; Oscar Salomón | 12h |
| 110 | 1.5.2.4 | **Gestión de Configuración** | 0.25d | 2014-05-12 | 2014-05-12 | 106 | 2014-05-22 | 2014-05-23 | 0.25d | 0d |  | 6h |
| 111 | 1.5.2.4.1 | Versionado de interfaz de usuario | 1h | 2014-05-12 | 2014-05-12 |  | 2014-05-22 | 2014-05-22 | 1h | 0d | Fernando Raviola; Lucas Ferrero; Oscar Salomón | 3h |
| 112 | 1.5.2.4.2 | Revisión de versionado de documentos modificados | 1h | 2014-05-12 | 2014-05-12 | 111 | 2014-05-22 | 2014-05-23 | 1h | 0d | Fernando Raviola; Lucas Ferrero; Oscar Salomón | 3h |
| 113 | 1.5.3 | **Iteración C3** | 4.88d | 2014-05-12 | 2014-06-03 | 98 | 2014-05-23 | 2014-06-13 | 4.88d | 0d |  | 109h |
| 114 | 1.5.3.1 | **Análisis/Diseño** | 0.38d | 2014-05-12 | 2014-05-13 |  | 2014-05-23 | 2014-05-23 | 0.38d | 0d |  | 9h |
| 115 | 1.5.3.1.1 | Refinación del Modelo de componentes | 3h | 2014-05-12 | 2014-05-13 |  | 2014-05-23 | 2014-05-23 | 3h | 0d | Fernando Raviola; Lucas Ferrero; Oscar Salomón | 9h |
| 116 | 1.5.3.2 | **Implementación** | 3.5d | 2014-05-15 | 2014-05-30 | 114 | 2014-05-23 | 2014-06-09 | 3.5d | 0d |  | 76h |
| 117 | 1.5.3.2.1 | Codificacion de logeo de usuario (FrontEnd) | 24h | 2014-05-15 | 2014-05-27 |  | 2014-05-23 | 2014-06-06 | 24h | 0.5d | Oscar Salomón | 24h |
| 118 | 1.5.3.2.2 | Codificación de seguridad [Roles y Usuario] (BackEnd) | 24h | 2014-05-15 | 2014-05-27 |  | 2014-05-23 | 2014-06-06 | 24h | 0.5d | Lucas Ferrero | 24h |
| 119 | 1.5.3.2.3 | Codificación de Local Storage (Android) | 28h | 2014-05-15 | 2014-05-30 |  | 2014-05-23 | 2014-06-09 | 28h | 0d | Fernando Raviola | 28h |
| 120 | 1.5.3.3 | **Gestión del Proyecto** | 0.88d | 2014-05-30 | 2014-06-02 | 116 | 2014-06-09 | 2014-06-13 | 0.88d | 0d |  | 21h |
| 121 | 1.5.3.3.1 | Actualización de Riesgos | 3h | 2014-05-30 | 2014-05-30 |  | 2014-06-09 | 2014-06-10 | 3h | 0d | Lucas Ferrero | 3h |
| 122 | 1.5.3.3.2 | Revisión de planificacion (posible replanificación) | 3h | 2014-05-30 | 2014-05-30 |  | 2014-06-09 | 2014-06-10 | 3h | 0d | Fernando Raviola; Oscar Salomón | 6h |
| 123 | 1.5.3.3.3 | Generación de Informe #6 | 4h | 2014-06-02 | 2014-06-02 | 122, 121 | 2014-06-10 | 2014-06-13 | 4h | 0d | Fernando Raviola; Lucas Ferrero; Oscar Salomón | 12h |
| 124 | 1.5.3.4 | **Gestión de Configuración** | 0.12d | 2014-06-03 | 2014-06-03 | 120 | 2014-06-13 | 2014-06-13 | 0.12d | 0d |  | 3h |
| 125 | 1.5.3.4.1 | Versionado de todos los proyectos | 1h | 2014-06-03 | 2014-06-03 |  | 2014-06-13 | 2014-06-13 | 1h | 0d | Oscar Salomón | 1h |
| 126 | 1.5.3.4.2 | Revisión de versionado de documentos modificados | 1h | 2014-06-03 | 2014-06-03 |  | 2014-06-13 | 2014-06-13 | 1h | 0d | Fernando Raviola; Lucas Ferrero | 2h |

| ID | WBS | Task | Duration | Start | Finish | Predecessors | Baseline start | Baseline finish | Baseline duration | Total slack | Resources | Work |
| --- | --- | --- | --- | --- | --- | --- | --- | --- | --- | --- | --- | --- |
| 127 | 1.5.4 | **Iteración C4** | 6.12d | 2014-06-03 | 2014-06-30 | 113 | 2014-06-13 | 2014-07-11 | 6.12d | 0d |  | 137h |
| 128 | 1.5.4.1 | **Análisis/Diseño** | 0.5d | 2014-06-03 | 2014-06-06 |  | 2014-06-13 | 2014-06-16 | 0.5d | 0d |  | 12h |
| 129 | 1.5.4.1.1 | Refinación del Modelo de Datos | 4h | 2014-06-03 | 2014-06-06 |  | 2014-06-13 | 2014-06-16 | 4h | 0d | Fernando Raviola; Lucas Ferrero; Oscar Salomón | 12h |
| 130 | 1.5.4.2 | **Implementación** | 4.75d | 2014-06-06 | 2014-06-27 | 128 | 2014-06-16 | 2014-07-07 | 4.75d | 0d |  | 106h |
| 131 | 1.5.4.2.1 | Codificación de Gestión de reservas online (FrontEnd) | 36h | 2014-06-06 | 2014-06-26 |  | 2014-06-16 | 2014-07-07 | 36h | 0.25d | Oscar Salomón | 36h |
| 132 | 1.5.4.2.2 | Codificación de ABM principales (BackEnd) | 38h | 2014-06-06 | 2014-06-27 |  | 2014-06-16 | 2014-07-07 | 38h | 0d | Lucas Ferrero | 38h |
| 133 | 1.5.4.2.3 | Codificación de ABM principales (Android) | 32h | 2014-06-06 | 2014-06-23 |  | 2014-06-16 | 2014-07-04 | 32h | 0.75d | Fernando Raviola | 32h |
| 134 | 1.5.4.3 | **Gestión del Proyecto** | 0.75d | 2014-06-27 | 2014-06-30 | 130 | 2014-07-07 | 2014-07-10 | 0.75d | 0d |  | 16h |
| 135 | 1.5.4.3.1 | Actualización de Riesgos | 2h | 2014-06-27 | 2014-06-27 |  | 2014-07-07 | 2014-07-08 | 2h | 0d | Fernando Raviola | 2h |
| 136 | 1.5.4.3.2 | Revisión de planificacion (posible replanificación) | 1h | 2014-06-27 | 2014-06-27 |  | 2014-07-07 | 2014-07-07 | 1h | 0.12d | Lucas Ferrero; Oscar Salomón | 2h |
| 137 | 1.5.4.3.3 | Generación de Informe #8 | 4h | 2014-06-27 | 2014-06-30 | 135, 136 | 2014-07-08 | 2014-07-10 | 4h | 0d | Fernando Raviola; Lucas Ferrero; Oscar Salomón | 12h |
| 138 | 1.5.4.4 | **Gestión de Configuración** | 0.12d | 2014-06-30 | 2014-06-30 | 134 | 2014-07-11 | 2014-07-11 | 0.12d | 0d |  | 3h |
| 139 | 1.5.4.4.1 | Versionado de todos los proyectos | 1h | 2014-06-30 | 2014-06-30 |  | 2014-07-11 | 2014-07-11 | 1h | 0d | Lucas Ferrero | 1h |
| 140 | 1.5.4.4.2 | Revisión de versionado de documentos modificados | 1h | 2014-06-30 | 2014-06-30 |  | 2014-07-11 | 2014-07-11 | 1h | 0d | Fernando Raviola; Oscar Salomón | 2h |
| 141 | 1.5.5 | **Iteración C5** | 8.12d | 2014-07-01 | 2014-08-05 | 127 | 2014-07-11 | 2014-08-15 | 8.12d | 0d |  | 185h |
| 142 | 1.5.5.1 | **Análisis/Diseño** | 0.75d | 2014-07-01 | 2014-07-04 |  | 2014-07-11 | 2014-07-14 | 0.75d | 0d |  | 18h |
| 143 | 1.5.5.1.1 | Revisión de Diagramas y Modelos de Análisis/Diseño | 6h | 2014-07-01 | 2014-07-04 |  | 2014-07-11 | 2014-07-14 | 6h | 0d | Fernando Raviola; Lucas Ferrero; Oscar Salomón | 18h |
| 144 | 1.5.5.2 | **Implementación** | 5.25d | 2014-07-04 | 2014-07-28 | 142 | 2014-07-14 | 2014-08-07 | 5.25d | 0d |  | 118h |
| 145 | 1.5.5.2.1 | Codificación de Calculos de tiempos de espera (FrontEnd) | 42h | 2014-07-04 | 2014-07-28 |  | 2014-07-14 | 2014-08-07 | 42h | 0d | Oscar Salomón | 42h |
| 146 | 1.5.5.2.2 | Codificación de Funciones básicas (BackEnd) | 41h | 2014-07-04 | 2014-07-28 |  | 2014-07-14 | 2014-08-05 | 41h | 0.12d | Lucas Ferrero | 41h |
| 147 | 1.5.5.2.3 | Codificación de visualizador de ordenes (Android) | 35h | 2014-07-04 | 2014-07-24 |  | 2014-07-14 | 2014-08-04 | 35h | 0.88d | Fernando Raviola | 35h |
| 148 | 1.5.5.3 | **Pruebas** | 1.25d | 2014-07-28 | 2014-08-01 | 144 | 2014-08-07 | 2014-08-12 | 1.25d | 0d |  | 30h |
| 149 | 1.5.5.3.1 | Pruebas de Funcionalidad (para las 3 aplicaciones) | 10h | 2014-07-28 | 2014-08-01 |  | 2014-08-07 | 2014-08-12 | 10h | 0d | Fernando Raviola; Lucas Ferrero; Oscar Salomón | 30h |
| 150 | 1.5.5.4 | **Gestión del Proyecto** | 0.75d | 2014-08-01 | 2014-08-05 | 148 | 2014-08-12 | 2014-08-15 | 0.75d | 0d |  | 16h |
| 151 | 1.5.5.4.1 | Actualización de Riesgos | 2h | 2014-08-01 | 2014-08-04 |  | 2014-08-12 | 2014-08-14 | 2h | 0d | Oscar Salomón | 2h |
| 152 | 1.5.5.4.2 | Revisión de planificacion (posible replanificación) | 1h | 2014-08-01 | 2014-08-04 |  | 2014-08-12 | 2014-08-12 | 1h | 0.12d | Fernando Raviola; Lucas Ferrero | 2h |
| 153 | 1.5.5.4.3 | Generación de Informe #9 | 4h | 2014-08-04 | 2014-08-05 | 151, 152 | 2014-08-14 | 2014-08-15 | 4h | 0d | Fernando Raviola; Lucas Ferrero; Oscar Salomón | 12h |

| ID | WBS | Task | Type | Duration | Start | Finish | Predecessors | Baseline start | Baseline finish | Baseline duration | Total slack | Resources | Work |
| --- | --- | --- | --- | --- | --- | --- | --- | --- | --- | --- | --- | --- | --- |
| 154 | 1.5.5.5 | **Gestión de Configuración** |  | 0.12d | 2014-08-05 | 2014-08-05 | 150 | 2014-08-15 | 2014-08-15 | 0.12d | 0d |  | 3h |
| 155 | 1.5.5.5.1 | Versionado de todos los proyectos |  | 1h | 2014-08-05 | 2014-08-05 |  | 2014-08-15 | 2014-08-15 | 1h | 0d | Fernando Raviola | 1h |
| 156 | 1.5.5.5.2 | Revisión de versionado de documentos modificados |  | 1h | 2014-08-05 | 2014-08-05 |  | 2014-08-15 | 2014-08-15 | 1h | 0d | Lucas Ferrero; Oscar Salomón | 2h |
| 157 | 1.5.6 | **Iteración C6** |  | 7.88d | 2014-08-07 | 2014-09-11 | 141 | 2014-08-15 | 2014-09-19 | 7.88d | 0d |  | 187h |
| 158 | 1.5.6.1 | **Análisis/Diseño** |  | 1d | 2014-08-07 | 2014-08-11 |  | 2014-08-15 | 2014-08-21 | 1d | 0d |  | 24h |
| 159 | 1.5.6.1.1 | Revisión de Diagramas y Modelos de Análisis/Diseño |  | 8h | 2014-08-07 | 2014-08-11 |  | 2014-08-15 | 2014-08-21 | 8h | 0d | Fernando Raviola; Lucas Ferrero; Oscar Salomón | 24h |
| 160 | 1.5.6.2 | **Implementación** |  | 4.75d | 2014-08-11 | 2014-09-01 | 158 | 2014-08-21 | 2014-09-11 | 4.75d | 0d |  | 112h |
| 161 | 1.5.6.2.1 | Codificación de Calculos de tiempos de espera (FrontEnd) |  | 38h | 2014-08-11 | 2014-09-01 |  | 2014-08-21 | 2014-09-11 | 38h | 0d | Oscar Salomón | 38h |
| 162 | 1.5.6.2.2 | Codificación de visualizador de Ordenes (BackEnd) |  | 36h | 2014-08-11 | 2014-09-01 |  | 2014-08-21 | 2014-09-09 | 36h | 0.25d | Lucas Ferrero | 36h |
| 163 | 1.5.6.2.3 | Codificación de personalización gráfica (Android) |  | 38h | 2014-08-11 | 2014-09-01 |  | 2014-08-21 | 2014-09-11 | 38h | 0d | Fernando Raviola | 38h |
| 164 | 1.5.6.3 | **Pruebas** |  | 1.25d | 2014-09-01 | 2014-09-05 | 160 | 2014-09-11 | 2014-09-16 | 1.25d | 0d |  | 30h |
| 165 | 1.5.6.3.1 | Pruebas de comunicación de interfaces y pruebas de funcionalidad |  | 10h | 2014-09-01 | 2014-09-05 |  | 2014-09-11 | 2014-09-16 | 10h | 0d | Fernando Raviola; Lucas Ferrero; Oscar Salomón | 30h |
| 166 | 1.5.6.4 | **Gestión del Proyecto** |  | 0.62d | 2014-09-08 | 2014-09-09 | 164 | 2014-09-16 | 2014-09-19 | 0.62d | 0d |  | 15h |
| 167 | 1.5.6.4.1 | Actualización de Riesgos |  | 1h | 2014-09-08 | 2014-09-08 |  | 2014-09-16 | 2014-09-16 | 1h | 0d | Fernando Raviola; Oscar Salomón | 2h |
| 168 | 1.5.6.4.2 | Revisión de planificacion (posible replanificación) |  | 1h | 2014-09-08 | 2014-09-08 |  | 2014-09-16 | 2014-09-16 | 1h | 0d | Lucas Ferrero | 1h |
| 169 | 1.5.6.4.3 | Generación de Informe #10 |  | 4h | 2014-09-08 | 2014-09-09 | 168, 167 | 2014-09-18 | 2014-09-19 | 4h | 0d | Fernando Raviola; Lucas Ferrero; Oscar Salomón | 12h |
| 170 | 1.5.6.5 | **Gestión de Configuración** |  | 0.25d | 2014-09-09 | 2014-09-11 | 166 | 2014-09-19 | 2014-09-19 | 0.25d | 0d |  | 6h |
| 171 | 1.5.6.5.1 | Versionado de todos los proyectos |  | 2h | 2014-09-09 | 2014-09-11 |  | 2014-09-19 | 2014-09-19 | 2h | 0d | Oscar Salomón | 2h |
| 172 | 1.5.6.5.2 | Revisión de versionado de documentos modificados |  | 2h | 2014-09-09 | 2014-09-11 |  | 2014-09-19 | 2014-09-19 | 2h | 0d | Fernando Raviola; Lucas Ferrero | 4h |
| 173 | 1.6 | Capacidad Operacional Inicial | milestone | 0h | 2014-09-11 | 2014-09-11 | 83 | 2014-09-19 | 2014-09-19 | 0h | 0d |  |  |
| 174 | 1.7 | **TRANSICIÓN** |  | 8.38d | 2014-09-11 | 2014-10-17 | 173 | 2014-09-22 | 2014-10-28 | 8.38d | 0d |  | 201h |
| 175 | 1.7.1 | **Iteración T1** |  | 8.38d | 2014-09-11 | 2014-10-17 |  | 2014-09-22 | 2014-10-28 | 8.38d | 0d |  | 201h |
| 176 | 1.7.1.1 | **Implementación** |  | 2.5d | 2014-09-11 | 2014-09-22 |  | 2014-09-22 | 2014-10-02 | 2.5d | 0d |  | 60h |
| 177 | 1.7.1.1.1 | Elaboracion de documentación para usuarios y videos tutoriales |  | 20h | 2014-09-11 | 2014-09-22 |  | 2014-09-22 | 2014-10-02 | 20h | 0d | Fernando Raviola; Lucas Ferrero; Oscar Salomón | 60h |

| ID | WBS | Task | Type | Duration | Start | Finish | Predecessors | Baseline start | Baseline finish | Baseline duration | Total slack | Resources | Work |
| --- | --- | --- | --- | --- | --- | --- | --- | --- | --- | --- | --- | --- | --- |
| 178 | 1.7.1.2 | **Despliegue** |  | 3d | 2014-09-22 | 2014-10-06 | 176 | 2014-10-02 | 2014-10-14 | 3d | 0d |  | 72h |
| 179 | 1.7.1.2.1 | Modelo de despliegue |  | 10h | 2014-09-22 | 2014-09-26 |  | 2014-10-02 | 2014-10-07 | 10h | 0d | Fernando Raviola; Lucas Ferrero; Oscar Salomón | 30h |
| 180 | 1.7.1.2.2 | Integración y puesta a punto del sistema |  | 14h | 2014-09-26 | 2014-10-06 | 179 | 2014-10-07 | 2014-10-14 | 14h | 0d | Fernando Raviola; Lucas Ferrero; Oscar Salomón | 42h |
| 181 | 1.7.1.3 | **Gestión del Proyecto** |  | 2.62d | 2014-10-06 | 2014-10-17 | 178 | 2014-10-16 | 2014-10-27 | 2.62d | 0d |  | 63h |
| 182 | 1.7.1.3.1 | Actualización de Riesgos |  | 1h | 2014-10-06 | 2014-10-06 |  | 2014-10-16 | 2014-10-16 | 1h | 0d | Fernando Raviola; Lucas Ferrero; Oscar Salomón | 3h |
| 183 | 1.7.1.3.2 | Revisión de planificacion (posible replanificación) |  | 1h | 2014-10-06 | 2014-10-06 | 182 | 2014-10-16 | 2014-10-16 | 1h | 0d | Fernando Raviola; Lucas Ferrero; Oscar Salomón | 3h |
| 184 | 1.7.1.3.3 | Análisis de resultados del proyecto |  | 15h | 2014-10-06 | 2014-10-14 | 183 | 2014-10-17 | 2014-10-24 | 15h | 0d | Fernando Raviola; Lucas Ferrero; Oscar Salomón | 45h |
| 185 | 1.7.1.3.4 | Generación de Informe #11 |  | 4h | 2014-10-14 | 2014-10-17 | 184 | 2014-10-24 | 2014-10-27 | 4h | 0d | Fernando Raviola; Lucas Ferrero; Oscar Salomón | 12h |
| 186 | 1.7.1.4 | **Gestión de Configuración** |  | 0.25d | 2014-10-17 | 2014-10-17 | 181 | 2014-10-27 | 2014-10-28 | 0.25d | 0d |  | 6h |
| 187 | 1.7.1.4.1 | Versionado de todos los proyectos |  | 2h | 2014-10-17 | 2014-10-17 |  | 2014-10-27 | 2014-10-28 | 2h | 0d | Fernando Raviola | 2h |
| 188 | 1.7.1.4.2 | Revisión de versionado de documentos modificados |  | 2h | 2014-10-17 | 2014-10-17 |  | 2014-10-27 | 2014-10-28 | 2h | 0d | Lucas Ferrero; Oscar Salomón | 4h |
| 189 | 1.8 | Lanzamiento de producto | milestone | 0h | 2014-10-17 | 2014-10-17 | 174 | 2014-10-28 | 2014-10-28 | 0h | 0d |  |  |
| 190 | 1.9 | Fin de Proyecto | milestone | 0h | 2014-10-17 | 2014-10-17 | 189 | 2014-10-28 | 2014-10-28 | 0h | 0d |  |  |
