# Planificación RestApp(LINEA BASE)

Schedule from MS Project, 2013-07-29 to 2014-10-28.
Privada

## Calendars

- Tesis: Mon 16:00-20:00; Tue 16:00-18:30; Wed off; Thu 17:00-19:00; Fri 16:00-20:00; Sat-Sun off. Exceptions (off unless hours are given): 2013-08-19 (Feriado), 2013-08-21 to 2013-08-23 (Congreso De Sistema), 2013-09-09 to 2013-09-13 (Fecha de examen), 2013-10-14 (Feriado), 2013-10-21 to 2013-10-25 (Fecha de examen), 2013-11-25 (Feriado), 2013-12-02 to 2013-12-06 (Fecha de examen), 2013-12-16 to 2013-12-20 (Fecha de examen), 2013-12-23 to 2013-12-27 (Semana de navidad), 2013-12-30 to 2014-01-03 (Semana de año nuevo), 2014-01-06 to 2014-01-31 (Vacaciones), 2014-02-10 to 2014-02-14 (Fecha de examen), 2014-02-17 to 2014-02-25 (Fecha de examen), 2014-03-03 to 2014-03-07 (Fecha de examen).

## Resources

| Resource |
| --- |
| Lucas Ferrero |
| Oscar Salomón |
| Fernando Raviola |

## Schedule

| ID | WBS | Task | Type | Duration | Start | Finish | Predecessors | Baseline start | Baseline finish | Baseline duration | Total slack | Resources | Work |
| --- | --- | --- | --- | --- | --- | --- | --- | --- | --- | --- | --- | --- | --- |
| 1 | 1 | **RestApp** |  | 78.75d | 2013-07-29 | 2014-10-28 |  | 2013-07-29 | 2014-10-28 | 78.75d | 0d |  | 1808h |
| 2 | 1.1 | **INICIO** |  | 12.38d | 2013-07-29 | 2013-10-04 |  | 2013-07-29 | 2013-10-04 | 12.38d | 0d |  | 252h |
| 3 | 1.1.1 | **Iteración I1** |  | 12.38d | 2013-07-29 | 2013-10-04 |  | 2013-07-29 | 2013-10-04 | 12.38d | 0d |  | 252h |
| 4 | 1.1.1.1 | **Modelo de Negocio** |  | 1.88d | 2013-07-29 | 2013-08-05 |  | 2013-07-29 | 2013-08-05 | 1.88d | 0d |  | 45h |
| 5 | 1.1.1.1.1 | Analisis del dominio del problema |  | 6h | 2013-07-29 | 2013-07-30 |  | 2013-07-29 | 2013-07-30 | 6h | 0d | Fernando Raviola; Lucas Ferrero; Oscar Salomón | 18h |
| 6 | 1.1.1.1.2 | Confección de entrevista |  | 2h | 2013-07-30 | 2013-08-01 | 5 | 2013-07-30 | 2013-08-01 | 2h | 0d | Fernando Raviola; Lucas Ferrero; Oscar Salomón | 6h |
| 7 | 1.1.1.1.3 | Realización de entrevista |  | 3h | 2013-08-01 | 2013-08-02 | 6 | 2013-08-01 | 2013-08-02 | 3h | 0d | Fernando Raviola; Lucas Ferrero; Oscar Salomón | 9h |
| 8 | 1.1.1.1.4 | Analisis de Entrevista |  | 4h | 2013-08-02 | 2013-08-05 | 7 | 2013-08-02 | 2013-08-05 | 4h | 0d | Fernando Raviola; Lucas Ferrero; Oscar Salomón | 12h |
| 9 | 1.1.1.2 | **Requerimientos** |  | 2.75d | 2013-08-05 | 2013-08-16 | 4 | 2013-08-05 | 2013-08-16 | 2.75d | 0d |  | 21h |
| 10 | 1.1.1.2.1 | Definición de caracteristicas y limitaciones |  | 7h | 2013-08-05 | 2013-08-09 |  | 2013-08-05 | 2013-08-09 | 7h | 0d | Fernando Raviola; Lucas Ferrero; Oscar Salomón | 21h |
| 11 | 1.1.1.2.2 | Definición de Requerimientos Funcionales y No Funcionales |  | 15h | 2013-08-09 | 2013-08-16 | 10 | 2013-08-09 | 2013-08-16 | 15h | 0d |  |  |
| 12 | 1.1.1.3 | **Análisis/Diseño** |  | 1d | 2013-08-16 | 2013-08-27 | 9 | 2013-08-16 | 2013-08-27 | 1d | 0d |  | 24h |
| 13 | 1.1.1.3.1 | Definición inicial del Modelo de Casos de Usos |  | 8h | 2013-08-16 | 2013-08-27 |  | 2013-08-16 | 2013-08-27 | 8h | 0d | Fernando Raviola; Lucas Ferrero; Oscar Salomón | 24h |
| 14 | 1.1.1.4 | **Gestión del Proyecto** |  | 5.12d | 2013-08-27 | 2013-09-26 | 12 | 2013-08-27 | 2013-09-26 | 5.12d | 0d |  | 123h |
| 15 | 1.1.1.4.1 | Estudio de prefactibilidad |  | 8h | 2013-08-27 | 2013-09-02 |  | 2013-08-27 | 2013-09-02 | 8h | 0d | Fernando Raviola; Lucas Ferrero; Oscar Salomón | 24h |
| 16 | 1.1.1.4.2 | Planificación |  | 15h | 2013-09-02 | 2013-09-16 | 15 | 2013-09-02 | 2013-09-16 | 15h | 0d | Fernando Raviola; Lucas Ferrero; Oscar Salomón | 45h |
| 17 | 1.1.1.4.3 | Gestión de riesgos (definición) |  | 8h | 2013-09-16 | 2013-09-20 | 16 | 2013-09-16 | 2013-09-20 | 8h | 0d | Fernando Raviola; Lucas Ferrero; Oscar Salomón | 24h |
| 18 | 1.1.1.4.4 | Gestión de configuración (definición) |  | 10h | 2013-09-20 | 2013-09-26 | 17 | 2013-09-20 | 2013-09-26 | 10h | 0d | Fernando Raviola; Lucas Ferrero; Oscar Salomón | 30h |
| 19 | 1.1.1.5 | **Gestión de configuración** |  | 1d | 2013-09-27 | 2013-09-30 | 14 | 2013-09-27 | 2013-09-30 | 1d | 0d |  | 24h |
| 20 | 1.1.1.5.1 | Preparación del ambiente de versionado |  | 8h | 2013-09-27 | 2013-09-30 |  | 2013-09-27 | 2013-09-30 | 8h | 0d | Fernando Raviola; Lucas Ferrero; Oscar Salomón | 24h |
| 21 | 1.1.1.6 | **Ambiente** |  | 0.62d | 2013-10-01 | 2013-10-04 | 19 | 2013-10-01 | 2013-10-04 | 0.62d | 0d |  | 15h |
| 22 | 1.1.1.6.1 | Identificación y evaluación de herramientas |  | 5h | 2013-10-01 | 2013-10-04 |  | 2013-10-01 | 2013-10-04 | 5h | 0d | Fernando Raviola; Lucas Ferrero; Oscar Salomón | 15h |
| 23 | 1.2 | Objetivos del ciclo de vida | milestone | 0h | 2013-10-04 | 2013-10-04 | 2 | 2013-10-04 | 2013-10-04 | 0h | 0d |  |  |
| 24 | 1.3 | **ELABORACIÓN** |  | 20.75d | 2013-10-04 | 2014-04-07 | 23 | 2013-10-04 | 2014-04-07 | 20.75d | 0d |  | 496h |
| 25 | 1.3.1 | **Iteración E1** |  | 7.88d | 2013-10-04 | 2013-11-18 |  | 2013-10-04 | 2013-11-18 | 7.88d | 0d |  | 189h |
| 26 | 1.3.1.1 | **Modelo de Negocio** |  | 1.25d | 2013-10-04 | 2013-10-08 |  | 2013-10-04 | 2013-10-08 | 1.25d | 0d |  | 30h |
| 27 | 1.3.1.1.1 | Entendimiento del Modelo de Negocio |  | 10h | 2013-10-04 | 2013-10-08 |  | 2013-10-04 | 2013-10-08 | 10h | 0d | Fernando Raviola; Lucas Ferrero; Oscar Salomón | 30h |

| ID | WBS | Task | Duration | Start | Finish | Predecessors | Baseline start | Baseline finish | Baseline duration | Total slack | Resources | Work |
| --- | --- | --- | --- | --- | --- | --- | --- | --- | --- | --- | --- | --- |
| 28 | 1.3.1.2 | **Requerimientos** | 1.38d | 2013-10-10 | 2013-10-18 | 26 | 2013-10-10 | 2013-10-18 | 1.38d | 0d |  | 33h |
| 29 | 1.3.1.2.1 | Definicón de nuevos requerimientos | 4h | 2013-10-10 | 2013-10-11 |  | 2013-10-10 | 2013-10-11 | 4h | 0d | Fernando Raviola; Lucas Ferrero; Oscar Salomón | 12h |
| 30 | 1.3.1.2.2 | Documentación de requerimientos según estandar | 3h | 2013-10-11 | 2013-10-15 | 29 | 2013-10-11 | 2013-10-15 | 3h | 0d | Fernando Raviola; Lucas Ferrero; Oscar Salomón | 9h |
| 31 | 1.3.1.2.3 | Jerarquización de requerimientos | 4h | 2013-10-15 | 2013-10-18 | 30 | 2013-10-15 | 2013-10-18 | 4h | 0d | Fernando Raviola; Lucas Ferrero; Oscar Salomón | 12h |
| 32 | 1.3.1.3 | **Análisis/Diseño** | 2.25d | 2013-10-18 | 2013-11-04 | 28 | 2013-10-18 | 2013-11-04 | 2.25d | 0d |  | 54h |
| 33 | 1.3.1.3.1 | Refinación de Modelo de Casos de Usos | 3h | 2013-10-18 | 2013-10-18 |  | 2013-10-18 | 2013-10-18 | 3h | 0d | Fernando Raviola; Lucas Ferrero; Oscar Salomón | 9h |
| 34 | 1.3.1.3.2 | Definición preliminar de Diagrama de clases | 15h | 2013-10-18 | 2013-11-04 | 33 | 2013-10-18 | 2013-11-04 | 15h | 0d | Fernando Raviola; Lucas Ferrero; Oscar Salomón | 45h |
| 35 | 1.3.1.4 | **Implementación** | 1d | 2013-11-04 | 2013-11-08 | 32 | 2013-11-04 | 2013-11-08 | 1d | 0d |  | 24h |
| 36 | 1.3.1.4.1 | Desarrollo prototipos independientes de prueba | 8h | 2013-11-04 | 2013-11-08 |  | 2013-11-04 | 2013-11-08 | 8h | 0d | Fernando Raviola; Lucas Ferrero; Oscar Salomón | 24h |
| 37 | 1.3.1.5 | **Gestión del Proyecto** | 1.38d | 2013-11-08 | 2013-11-14 | 35 | 2013-11-08 | 2013-11-14 | 1.38d | 0d |  | 33h |
| 38 | 1.3.1.5.1 | Actualización y priorización de Riesgos | 4h | 2013-11-08 | 2013-11-11 |  | 2013-11-08 | 2013-11-11 | 4h | 0d | Fernando Raviola; Lucas Ferrero; Oscar Salomón | 12h |
| 39 | 1.3.1.5.2 | Refinación del Plan de Proyecto | 3h | 2013-11-11 | 2013-11-12 | 38 | 2013-11-11 | 2013-11-12 | 3h | 0d | Fernando Raviola; Lucas Ferrero; Oscar Salomón | 9h |
| 40 | 1.3.1.5.3 | Generación de Informe #1 | 4h | 2013-11-12 | 2013-11-14 | 39 | 2013-11-12 | 2013-11-14 | 4h | 0d | Fernando Raviola; Lucas Ferrero; Oscar Salomón | 12h |
| 41 | 1.3.1.6 | **Gestión de Configuración** | 0.25d | 2013-11-15 | 2013-11-15 | 37 | 2013-11-15 | 2013-11-15 | 0.25d | 0d |  | 6h |
| 42 | 1.3.1.6.1 | Creacion de linea base de Planificación | 1h | 2013-11-15 | 2013-11-15 |  | 2013-11-15 | 2013-11-15 | 1h | 0d | Fernando Raviola; Lucas Ferrero; Oscar Salomón | 3h |
| 43 | 1.3.1.6.2 | Revisión de versionado de documentos modificados | 1h | 2013-11-15 | 2013-11-15 | 42 | 2013-11-15 | 2013-11-15 | 1h | 0d | Fernando Raviola; Lucas Ferrero; Oscar Salomón | 3h |
| 44 | 1.3.1.7 | **Ambiente** | 0.38d | 2013-11-15 | 2013-11-18 | 41 | 2013-11-15 | 2013-11-18 | 0.38d | 0d |  | 9h |
| 45 | 1.3.1.7.1 | Identificación de Tecnología | 3h | 2013-11-15 | 2013-11-18 |  | 2013-11-15 | 2013-11-18 | 3h | 0d | Fernando Raviola; Lucas Ferrero; Oscar Salomón | 9h |
| 46 | 1.3.2 | **Iteración E2** | 7.88d | 2013-11-18 | 2014-03-14 | 25 | 2013-11-18 | 2014-03-14 | 7.88d | 0d |  | 187h |
| 47 | 1.3.2.1 | **Modelo de Negocio** | 0.62d | 2013-11-18 | 2013-11-19 |  | 2013-11-18 | 2013-11-19 | 0.62d | 0d |  | 15h |
| 48 | 1.3.2.1.1 | Refinación del Modelo de Negocio | 5h | 2013-11-18 | 2013-11-19 |  | 2013-11-18 | 2013-11-19 | 5h | 0d | Fernando Raviola; Lucas Ferrero; Oscar Salomón | 15h |
| 49 | 1.3.2.2 | **Requerimientos** | 0.5d | 2013-11-19 | 2013-11-22 | 47 | 2013-11-19 | 2013-11-22 | 0.5d | 0d |  | 10h |
| 50 | 1.3.2.2.1 | Validación de requerimientos | 3h | 2013-11-19 | 2013-11-22 |  | 2013-11-19 | 2013-11-22 | 3h | 0.12d | Fernando Raviola; Oscar Salomón | 6h |
| 51 | 1.3.2.2.2 | Mapeo de Requerimientos a Casos de Uso | 4h | 2013-11-19 | 2013-11-22 |  | 2013-11-19 | 2013-11-22 | 4h | 0d | Lucas Ferrero | 4h |

| ID | WBS | Task | Duration | Start | Finish | Predecessors | Baseline start | Baseline finish | Baseline duration | Total slack | Resources | Work |
| --- | --- | --- | --- | --- | --- | --- | --- | --- | --- | --- | --- | --- |
| 52 | 1.3.2.3 | **Análisis/Diseño** | 4.5d | 2013-11-22 | 2014-02-07 | 49 | 2013-11-22 | 2014-02-07 | 4.5d | 0d |  | 108h |
| 53 | 1.3.2.3.1 | Definición Inicial de diagrama de Clases | 10h | 2013-11-22 | 2013-11-29 |  | 2013-11-22 | 2013-11-29 | 10h | 0d | Fernando Raviola; Lucas Ferrero; Oscar Salomón | 30h |
| 54 | 1.3.2.3.2 | Definición inicial del Modelo de Datos | 8h | 2013-11-29 | 2013-12-12 | 53 | 2013-11-29 | 2013-12-12 | 8h | 0d | Fernando Raviola; Lucas Ferrero; Oscar Salomón | 24h |
| 55 | 1.3.2.3.3 | Definición inicial de Diagrama de Actividades | 8h | 2013-12-12 | 2014-02-03 | 54 | 2013-12-12 | 2014-02-03 | 8h | 0d | Fernando Raviola; Lucas Ferrero; Oscar Salomón | 24h |
| 56 | 1.3.2.3.4 | Definición inicial de Diagramas de Secuencia | 10h | 2014-02-03 | 2014-02-07 | 55 | 2014-02-03 | 2014-02-07 | 10h | 0d | Fernando Raviola; Lucas Ferrero; Oscar Salomón | 30h |
| 57 | 1.3.2.4 | **Implementación** | 0.75d | 2014-02-27 | 2014-02-28 | 52 | 2014-02-27 | 2014-02-28 | 0.75d | 0d |  | 18h |
| 58 | 1.3.2.4.1 | Mejoramientos de prototipos | 6h | 2014-02-27 | 2014-02-28 |  | 2014-02-27 | 2014-02-28 | 6h | 0d | Fernando Raviola; Lucas Ferrero; Oscar Salomón | 18h |
| 59 | 1.3.2.5 | **Gestión del Proyecto** | 0.75d | 2014-03-10 | 2014-03-11 | 57 | 2014-03-10 | 2014-03-11 | 0.75d | 0d |  | 18h |
| 60 | 1.3.2.5.1 | Validación del Plan de proyecto | 2h | 2014-03-10 | 2014-03-10 |  | 2014-03-10 | 2014-03-10 | 2h | 0d | Fernando Raviola; Lucas Ferrero; Oscar Salomón | 6h |
| 61 | 1.3.2.5.2 | Generación de Informe #2 | 4h | 2014-03-10 | 2014-03-11 | 60 | 2014-03-10 | 2014-03-11 | 4h | 0d | Fernando Raviola; Lucas Ferrero; Oscar Salomón | 12h |
| 62 | 1.3.2.6 | **Gestión de Configuración** | 0.12d | 2014-03-11 | 2014-03-13 | 59 | 2014-03-11 | 2014-03-13 | 0.12d | 0d |  | 3h |
| 63 | 1.3.2.6.1 | Versionado de los prototipos | 1h | 2014-03-11 | 2014-03-13 |  | 2014-03-11 | 2014-03-13 | 1h | 0d | Oscar Salomón | 1h |
| 64 | 1.3.2.6.2 | Revisión de versionado de documentos modificados | 1h | 2014-03-11 | 2014-03-13 |  | 2014-03-11 | 2014-03-13 | 1h | 0d | Fernando Raviola; Lucas Ferrero | 2h |
| 65 | 1.3.2.7 | **Ambiente** | 0.62d | 2014-03-13 | 2014-03-14 | 62 | 2014-03-13 | 2014-03-14 | 0.62d | 0d |  | 15h |
| 66 | 1.3.2.7.1 | Preparación del ambiente de desarrollo | 5h | 2014-03-13 | 2014-03-14 |  | 2014-03-13 | 2014-03-14 | 5h | 0d | Fernando Raviola; Lucas Ferrero; Oscar Salomón | 15h |
| 67 | 1.3.3 | **Iteración E3** | 5d | 2014-03-14 | 2014-04-07 | 46 | 2014-03-14 | 2014-04-07 | 5d | 0d |  | 120h |
| 68 | 1.3.3.1 | **Requerimientos** | 0.38d | 2014-03-14 | 2014-03-17 |  | 2014-03-14 | 2014-03-17 | 0.38d | 0d |  | 9h |
| 69 | 1.3.3.1.1 | Validacion de Mapeo de Requerimientos a Casos de Uso | 3h | 2014-03-14 | 2014-03-17 |  | 2014-03-14 | 2014-03-17 | 3h | 0d | Fernando Raviola; Lucas Ferrero; Oscar Salomón | 9h |
| 70 | 1.3.3.2 | **Análisis/Diseño** | 2.75d | 2014-03-17 | 2014-03-28 | 68 | 2014-03-17 | 2014-03-28 | 2.75d | 0d |  | 66h |
| 71 | 1.3.3.2.1 | Refinación de Diagrama de Casos de Uso | 6h | 2014-03-17 | 2014-03-20 |  | 2014-03-17 | 2014-03-20 | 6h | 0d | Fernando Raviola; Lucas Ferrero; Oscar Salomón | 18h |
| 72 | 1.3.3.2.2 | Refinación de Diagrama de Clases | 6h | 2014-03-21 | 2014-03-24 | 71 | 2014-03-21 | 2014-03-24 | 6h | 0d | Fernando Raviola; Lucas Ferrero; Oscar Salomón | 18h |
| 73 | 1.3.3.2.3 | Refinación del Modelo de Datos | 4h | 2014-03-24 | 2014-03-25 | 72 | 2014-03-24 | 2014-03-25 | 4h | 0d | Fernando Raviola; Lucas Ferrero; Oscar Salomón | 12h |
| 74 | 1.3.3.2.4 | Descripción de casos de uso mas importantes | 6h | 2014-03-25 | 2014-03-28 | 73 | 2014-03-25 | 2014-03-28 | 6h | 0d | Fernando Raviola; Lucas Ferrero; Oscar Salomón | 18h |
| 75 | 1.3.3.3 | **Implementación** | 1d | 2014-03-28 | 2014-04-03 | 70 | 2014-03-28 | 2014-04-03 | 1d | 0d |  | 24h |
| 76 | 1.3.3.3.1 | Definición de interfaces de comunicación entre plataformas | 8h | 2014-03-28 | 2014-04-03 |  | 2014-03-28 | 2014-04-03 | 8h | 0d | Fernando Raviola; Lucas Ferrero; Oscar Salomón | 24h |

| ID | WBS | Task | Type | Duration | Start | Finish | Predecessors | Baseline start | Baseline finish | Baseline duration | Total slack | Resources | Work |
| --- | --- | --- | --- | --- | --- | --- | --- | --- | --- | --- | --- | --- | --- |
| 77 | 1.3.3.4 | **Gestión del Proyecto** |  | 0.75d | 2014-04-03 | 2014-04-07 | 75 | 2014-04-03 | 2014-04-07 | 0.75d | 0d |  | 18h |
| 78 | 1.3.3.4.1 | Actualización de planes de prevención y contigencia para nuevos Riesgos |  | 2h | 2014-04-03 | 2014-04-04 |  | 2014-04-03 | 2014-04-04 | 2h | 0d | Fernando Raviola; Lucas Ferrero; Oscar Salomón | 6h |
| 79 | 1.3.3.4.2 | Generación de Informe #3 |  | 4h | 2014-04-04 | 2014-04-07 | 78 | 2014-04-04 | 2014-04-07 | 4h | 0d | Fernando Raviola; Lucas Ferrero; Oscar Salomón | 12h |
| 80 | 1.3.3.5 | **Gestión de Configuración** |  | 0.12d | 2014-04-07 | 2014-04-07 | 77 | 2014-04-07 | 2014-04-07 | 0.12d | 0d |  | 3h |
| 81 | 1.3.3.5.1 | Revisión de versionado de documentos modificados |  | 1h | 2014-04-07 | 2014-04-07 |  | 2014-04-07 | 2014-04-07 | 1h | 0d | Fernando Raviola; Lucas Ferrero; Oscar Salomón | 3h |
| 82 | 1.4 | Arquitectura del ciclo de vida | milestone | 0h | 2014-04-07 | 2014-04-07 | 24 | 2014-04-07 | 2014-04-07 | 0h | 0d |  |  |
| 83 | 1.5 | **CONSTRUCCIÓN** |  | 37.25d | 2014-04-07 | 2014-09-19 | 82 | 2014-04-07 | 2014-09-19 | 37.25d | 0d |  | 859h |
| 84 | 1.5.1 | **Iteración C1** |  | 4d | 2014-04-07 | 2014-04-25 |  | 2014-04-07 | 2014-04-25 | 4d | 0d |  | 96h |
| 85 | 1.5.1.1 | **Análisis/Diseño** |  | 1d | 2014-04-07 | 2014-04-11 |  | 2014-04-07 | 2014-04-11 | 1d | 0d |  | 24h |
| 86 | 1.5.1.1.1 | Refinación de Diagramas de Actividad |  | 4h | 2014-04-07 | 2014-04-08 |  | 2014-04-07 | 2014-04-08 | 4h | 0d | Fernando Raviola; Lucas Ferrero; Oscar Salomón | 12h |
| 87 | 1.5.1.1.2 | Refinación de Diagramas de Secuencia |  | 4h | 2014-04-08 | 2014-04-11 | 86 | 2014-04-08 | 2014-04-11 | 4h | 0d | Fernando Raviola; Lucas Ferrero; Oscar Salomón | 12h |
| 88 | 1.5.1.2 | **Implementación** |  | 1.88d | 2014-04-11 | 2014-04-18 | 85 | 2014-04-11 | 2014-04-18 | 1.88d | 0d |  | 45h |
| 89 | 1.5.1.2.1 | Construcción de Base de Datos |  | 8h | 2014-04-11 | 2014-04-15 |  | 2014-04-11 | 2014-04-15 | 8h | 0d | Fernando Raviola; Lucas Ferrero; Oscar Salomón | 24h |
| 90 | 1.5.1.2.2 | Definición de Interfaz de Usuario |  | 7h | 2014-04-15 | 2014-04-18 | 89 | 2014-04-15 | 2014-04-18 | 7h | 0d | Fernando Raviola; Lucas Ferrero; Oscar Salomón | 21h |
| 91 | 1.5.1.3 | **Gestión del Proyecto** |  | 1d | 2014-04-21 | 2014-04-24 | 88 | 2014-04-21 | 2014-04-24 | 1d | 0d |  | 24h |
| 92 | 1.5.1.3.1 | Actualización de Riesgos |  | 1h | 2014-04-21 | 2014-04-21 |  | 2014-04-21 | 2014-04-21 | 1h | 0d | Fernando Raviola; Lucas Ferrero; Oscar Salomón | 3h |
| 93 | 1.5.1.3.2 | Revisión de planificacion (posible replanificación) |  | 3h | 2014-04-21 | 2014-04-21 | 92 | 2014-04-21 | 2014-04-21 | 3h | 0d | Fernando Raviola; Lucas Ferrero; Oscar Salomón | 9h |
| 94 | 1.5.1.3.3 | Generación de Informe #4 |  | 4h | 2014-04-22 | 2014-04-24 | 93 | 2014-04-22 | 2014-04-24 | 4h | 0d | Fernando Raviola; Lucas Ferrero; Oscar Salomón | 12h |
| 95 | 1.5.1.4 | **Gestión de Configuración** |  | 0.12d | 2014-04-24 | 2014-04-25 | 91 | 2014-04-24 | 2014-04-25 | 0.12d | 0d |  | 3h |
| 96 | 1.5.1.4.1 | Versionado de prototipos |  | 1h | 2014-04-24 | 2014-04-25 |  | 2014-04-24 | 2014-04-25 | 1h | 0d | Fernando Raviola | 1h |
| 97 | 1.5.1.4.2 | Revisión de versionado de documentos modificados |  | 1h | 2014-04-24 | 2014-04-25 |  | 2014-04-24 | 2014-04-25 | 1h | 0d | Lucas Ferrero; Oscar Salomón | 2h |
| 98 | 1.5.2 | **Iteración C2** |  | 6.25d | 2014-04-25 | 2014-05-23 | 84 | 2014-04-25 | 2014-05-23 | 6.25d | 0d |  | 145h |
| 99 | 1.5.2.1 | **Análisis/Diseño** |  | 1.62d | 2014-04-25 | 2014-05-02 |  | 2014-04-25 | 2014-05-02 | 1.62d | 0d |  | 39h |
| 100 | 1.5.2.1.1 | Definición inicial del Modelo de componentes |  | 9h | 2014-04-25 | 2014-04-29 |  | 2014-04-25 | 2014-04-29 | 9h | 0d | Fernando Raviola; Lucas Ferrero; Oscar Salomón | 27h |
| 101 | 1.5.2.1.2 | Refinación de Diagramas de clases (agregado de operaciones) |  | 4h | 2014-04-29 | 2014-05-02 | 100 | 2014-04-29 | 2014-05-02 | 4h | 0d | Fernando Raviola; Lucas Ferrero; Oscar Salomón | 12h |

| ID | WBS | Task | Duration | Start | Finish | Predecessors | Baseline start | Baseline finish | Baseline duration | Total slack | Resources | Work |
| --- | --- | --- | --- | --- | --- | --- | --- | --- | --- | --- | --- | --- |
| 102 | 1.5.2.2 | **Implementación** | 3.12d | 2014-05-02 | 2014-05-16 | 99 | 2014-05-02 | 2014-05-16 | 3.12d | 0d |  | 70h |
| 103 | 1.5.2.2.1 | Codificación de Interfaz de usuario (FrontEnd) | 25h | 2014-05-02 | 2014-05-16 |  | 2014-05-02 | 2014-05-16 | 25h | 0d | Oscar Salomón | 25h |
| 104 | 1.5.2.2.2 | Codificación de Interfaz de usuario (BackEnd) | 22h | 2014-05-02 | 2014-05-13 |  | 2014-05-02 | 2014-05-13 | 22h | 0.38d | Lucas Ferrero | 22h |
| 105 | 1.5.2.2.3 | Codificación de Interfaz de usuario (Android) | 23h | 2014-05-02 | 2014-05-15 |  | 2014-05-02 | 2014-05-15 | 23h | 0.25d | Fernando Raviola | 23h |
| 106 | 1.5.2.3 | **Gestión del Proyecto** | 1.25d | 2014-05-16 | 2014-05-22 | 102 | 2014-05-16 | 2014-05-22 | 1.25d | 0d |  | 30h |
| 107 | 1.5.2.3.1 | Actualización de Riesgos | 3h | 2014-05-16 | 2014-05-16 |  | 2014-05-16 | 2014-05-16 | 3h | 0d | Fernando Raviola; Lucas Ferrero; Oscar Salomón | 9h |
| 108 | 1.5.2.3.2 | Revisión de planificacion (posible replanificación) | 3h | 2014-05-19 | 2014-05-19 | 107 | 2014-05-19 | 2014-05-19 | 3h | 0d | Fernando Raviola; Lucas Ferrero; Oscar Salomón | 9h |
| 109 | 1.5.2.3.3 | Generación de Informe #5 | 4h | 2014-05-19 | 2014-05-22 | 108 | 2014-05-19 | 2014-05-22 | 4h | 0d | Fernando Raviola; Lucas Ferrero; Oscar Salomón | 12h |
| 110 | 1.5.2.4 | **Gestión de Configuración** | 0.25d | 2014-05-22 | 2014-05-23 | 106 | 2014-05-22 | 2014-05-23 | 0.25d | 0d |  | 6h |
| 111 | 1.5.2.4.1 | Versionado de interfaz de usuario | 1h | 2014-05-22 | 2014-05-22 |  | 2014-05-22 | 2014-05-22 | 1h | 0d | Fernando Raviola; Lucas Ferrero; Oscar Salomón | 3h |
| 112 | 1.5.2.4.2 | Revisión de versionado de documentos modificados | 1h | 2014-05-22 | 2014-05-23 | 111 | 2014-05-22 | 2014-05-23 | 1h | 0d | Fernando Raviola; Lucas Ferrero; Oscar Salomón | 3h |
| 113 | 1.5.3 | **Iteración C3** | 4.88d | 2014-05-23 | 2014-06-13 | 98 | 2014-05-23 | 2014-06-13 | 4.88d | 0d |  | 109h |
| 114 | 1.5.3.1 | **Análisis/Diseño** | 0.38d | 2014-05-23 | 2014-05-23 |  | 2014-05-23 | 2014-05-23 | 0.38d | 0d |  | 9h |
| 115 | 1.5.3.1.1 | Refinación del Modelo de componentes | 3h | 2014-05-23 | 2014-05-23 |  | 2014-05-23 | 2014-05-23 | 3h | 0d | Fernando Raviola; Lucas Ferrero; Oscar Salomón | 9h |
| 116 | 1.5.3.2 | **Implementación** | 3.5d | 2014-05-23 | 2014-06-09 | 114 | 2014-05-23 | 2014-06-09 | 3.5d | 0d |  | 76h |
| 117 | 1.5.3.2.1 | Codificacion de logeo de usuario (FrontEnd) | 24h | 2014-05-23 | 2014-06-06 |  | 2014-05-23 | 2014-06-06 | 24h | 0.5d | Oscar Salomón | 24h |
| 118 | 1.5.3.2.2 | Codificación de seguridad [Roles y Usuario] (BackEnd) | 24h | 2014-05-23 | 2014-06-06 |  | 2014-05-23 | 2014-06-06 | 24h | 0.5d | Lucas Ferrero | 24h |
| 119 | 1.5.3.2.3 | Codificación de Local Storage (Android) | 28h | 2014-05-23 | 2014-06-09 |  | 2014-05-23 | 2014-06-09 | 28h | 0d | Fernando Raviola | 28h |
| 120 | 1.5.3.3 | **Gestión del Proyecto** | 0.88d | 2014-06-09 | 2014-06-13 | 116 | 2014-06-09 | 2014-06-13 | 0.88d | 0d |  | 21h |
| 121 | 1.5.3.3.1 | Actualización de Riesgos | 3h | 2014-06-09 | 2014-06-10 |  | 2014-06-09 | 2014-06-10 | 3h | 0d | Lucas Ferrero | 3h |
| 122 | 1.5.3.3.2 | Revisión de planificacion (posible replanificación) | 3h | 2014-06-09 | 2014-06-10 |  | 2014-06-09 | 2014-06-10 | 3h | 0d | Fernando Raviola; Oscar Salomón | 6h |
| 123 | 1.5.3.3.3 | Generación de Informe #6 | 4h | 2014-06-10 | 2014-06-13 | 122, 121 | 2014-06-10 | 2014-06-13 | 4h | 0d | Fernando Raviola; Lucas Ferrero; Oscar Salomón | 12h |
| 124 | 1.5.3.4 | **Gestión de Configuración** | 0.12d | 2014-06-13 | 2014-06-13 | 120 | 2014-06-13 | 2014-06-13 | 0.12d | 0d |  | 3h |
| 125 | 1.5.3.4.1 | Versionado de todos los proyectos | 1h | 2014-06-13 | 2014-06-13 |  | 2014-06-13 | 2014-06-13 | 1h | 0d | Oscar Salomón | 1h |
| 126 | 1.5.3.4.2 | Revisión de versionado de documentos modificados | 1h | 2014-06-13 | 2014-06-13 |  | 2014-06-13 | 2014-06-13 | 1h | 0d | Fernando Raviola; Lucas Ferrero | 2h |

| ID | WBS | Task | Duration | Start | Finish | Predecessors | Baseline start | Baseline finish | Baseline duration | Total slack | Resources | Work |
| --- | --- | --- | --- | --- | --- | --- | --- | --- | --- | --- | --- | --- |
| 127 | 1.5.4 | **Iteración C4** | 6.12d | 2014-06-13 | 2014-07-11 | 113 | 2014-06-13 | 2014-07-11 | 6.12d | 0d |  | 137h |
| 128 | 1.5.4.1 | **Análisis/Diseño** | 0.5d | 2014-06-13 | 2014-06-16 |  | 2014-06-13 | 2014-06-16 | 0.5d | 0d |  | 12h |
| 129 | 1.5.4.1.1 | Refinación del Modelo de Datos | 4h | 2014-06-13 | 2014-06-16 |  | 2014-06-13 | 2014-06-16 | 4h | 0d | Fernando Raviola; Lucas Ferrero; Oscar Salomón | 12h |
| 130 | 1.5.4.2 | **Implementación** | 4.75d | 2014-06-16 | 2014-07-07 | 128 | 2014-06-16 | 2014-07-07 | 4.75d | 0d |  | 106h |
| 131 | 1.5.4.2.1 | Codificación de Gestión de reservas online (FrontEnd) | 36h | 2014-06-16 | 2014-07-07 |  | 2014-06-16 | 2014-07-07 | 36h | 0.25d | Oscar Salomón | 36h |
| 132 | 1.5.4.2.2 | Codificación de ABM principales (BackEnd) | 38h | 2014-06-16 | 2014-07-07 |  | 2014-06-16 | 2014-07-07 | 38h | 0d | Lucas Ferrero | 38h |
| 133 | 1.5.4.2.3 | Codificación de ABM principales (Android) | 32h | 2014-06-16 | 2014-07-04 |  | 2014-06-16 | 2014-07-04 | 32h | 0.75d | Fernando Raviola | 32h |
| 134 | 1.5.4.3 | **Gestión del Proyecto** | 0.75d | 2014-07-07 | 2014-07-10 | 130 | 2014-07-07 | 2014-07-10 | 0.75d | 0d |  | 16h |
| 135 | 1.5.4.3.1 | Actualización de Riesgos | 2h | 2014-07-07 | 2014-07-08 |  | 2014-07-07 | 2014-07-08 | 2h | 0d | Fernando Raviola | 2h |
| 136 | 1.5.4.3.2 | Revisión de planificacion (posible replanificación) | 1h | 2014-07-07 | 2014-07-07 |  | 2014-07-07 | 2014-07-07 | 1h | 0.12d | Lucas Ferrero; Oscar Salomón | 2h |
| 137 | 1.5.4.3.3 | Generación de Informe #8 | 4h | 2014-07-08 | 2014-07-10 | 135, 136 | 2014-07-08 | 2014-07-10 | 4h | 0d | Fernando Raviola; Lucas Ferrero; Oscar Salomón | 12h |
| 138 | 1.5.4.4 | **Gestión de Configuración** | 0.12d | 2014-07-11 | 2014-07-11 | 134 | 2014-07-11 | 2014-07-11 | 0.12d | 0d |  | 3h |
| 139 | 1.5.4.4.1 | Versionado de todos los proyectos | 1h | 2014-07-11 | 2014-07-11 |  | 2014-07-11 | 2014-07-11 | 1h | 0d | Lucas Ferrero | 1h |
| 140 | 1.5.4.4.2 | Revisión de versionado de documentos modificados | 1h | 2014-07-11 | 2014-07-11 |  | 2014-07-11 | 2014-07-11 | 1h | 0d | Fernando Raviola; Oscar Salomón | 2h |
| 141 | 1.5.5 | **Iteración C5** | 8.12d | 2014-07-11 | 2014-08-15 | 127 | 2014-07-11 | 2014-08-15 | 8.12d | 0d |  | 185h |
| 142 | 1.5.5.1 | **Análisis/Diseño** | 0.75d | 2014-07-11 | 2014-07-14 |  | 2014-07-11 | 2014-07-14 | 0.75d | 0d |  | 18h |
| 143 | 1.5.5.1.1 | Revisión de Diagramas y Modelos de Análisis/Diseño | 6h | 2014-07-11 | 2014-07-14 |  | 2014-07-11 | 2014-07-14 | 6h | 0d | Fernando Raviola; Lucas Ferrero; Oscar Salomón | 18h |
| 144 | 1.5.5.2 | **Implementación** | 5.25d | 2014-07-14 | 2014-08-07 | 142 | 2014-07-14 | 2014-08-07 | 5.25d | 0d |  | 118h |
| 145 | 1.5.5.2.1 | Codificación de Calculos de tiempos de espera (FrontEnd) | 42h | 2014-07-14 | 2014-08-07 |  | 2014-07-14 | 2014-08-07 | 42h | 0d | Oscar Salomón | 42h |
| 146 | 1.5.5.2.2 | Codificación de Funciones básicas (BackEnd) | 41h | 2014-07-14 | 2014-08-05 |  | 2014-07-14 | 2014-08-05 | 41h | 0.12d | Lucas Ferrero | 41h |
| 147 | 1.5.5.2.3 | Codificación de visualizador de ordenes (Android) | 35h | 2014-07-14 | 2014-08-04 |  | 2014-07-14 | 2014-08-04 | 35h | 0.88d | Fernando Raviola | 35h |
| 148 | 1.5.5.3 | **Pruebas** | 1.25d | 2014-08-07 | 2014-08-12 | 144 | 2014-08-07 | 2014-08-12 | 1.25d | 0d |  | 30h |
| 149 | 1.5.5.3.1 | Pruebas de Funcionalidad (para las 3 aplicaciones) | 10h | 2014-08-07 | 2014-08-12 |  | 2014-08-07 | 2014-08-12 | 10h | 0d | Fernando Raviola; Lucas Ferrero; Oscar Salomón | 30h |
| 150 | 1.5.5.4 | **Gestión del Proyecto** | 0.75d | 2014-08-12 | 2014-08-15 | 148 | 2014-08-12 | 2014-08-15 | 0.75d | 0d |  | 16h |
| 151 | 1.5.5.4.1 | Actualización de Riesgos | 2h | 2014-08-12 | 2014-08-14 |  | 2014-08-12 | 2014-08-14 | 2h | 0d | Oscar Salomón | 2h |
| 152 | 1.5.5.4.2 | Revisión de planificacion (posible replanificación) | 1h | 2014-08-12 | 2014-08-12 |  | 2014-08-12 | 2014-08-12 | 1h | 0.12d | Fernando Raviola; Lucas Ferrero | 2h |
| 153 | 1.5.5.4.3 | Generación de Informe #9 | 4h | 2014-08-14 | 2014-08-15 | 151, 152 | 2014-08-14 | 2014-08-15 | 4h | 0d | Fernando Raviola; Lucas Ferrero; Oscar Salomón | 12h |

| ID | WBS | Task | Type | Duration | Start | Finish | Predecessors | Baseline start | Baseline finish | Baseline duration | Total slack | Resources | Work |
| --- | --- | --- | --- | --- | --- | --- | --- | --- | --- | --- | --- | --- | --- |
| 154 | 1.5.5.5 | **Gestión de Configuración** |  | 0.12d | 2014-08-15 | 2014-08-15 | 150 | 2014-08-15 | 2014-08-15 | 0.12d | 0d |  | 3h |
| 155 | 1.5.5.5.1 | Versionado de todos los proyectos |  | 1h | 2014-08-15 | 2014-08-15 |  | 2014-08-15 | 2014-08-15 | 1h | 0d | Fernando Raviola | 1h |
| 156 | 1.5.5.5.2 | Revisión de versionado de documentos modificados |  | 1h | 2014-08-15 | 2014-08-15 |  | 2014-08-15 | 2014-08-15 | 1h | 0d | Lucas Ferrero; Oscar Salomón | 2h |
| 157 | 1.5.6 | **Iteración C6** |  | 7.88d | 2014-08-15 | 2014-09-19 | 141 | 2014-08-15 | 2014-09-19 | 7.88d | 0d |  | 187h |
| 158 | 1.5.6.1 | **Análisis/Diseño** |  | 1d | 2014-08-15 | 2014-08-21 |  | 2014-08-15 | 2014-08-21 | 1d | 0d |  | 24h |
| 159 | 1.5.6.1.1 | Revisión de Diagramas y Modelos de Análisis/Diseño |  | 8h | 2014-08-15 | 2014-08-21 |  | 2014-08-15 | 2014-08-21 | 8h | 0d | Fernando Raviola; Lucas Ferrero; Oscar Salomón | 24h |
| 160 | 1.5.6.2 | **Implementación** |  | 4.75d | 2014-08-21 | 2014-09-11 | 158 | 2014-08-21 | 2014-09-11 | 4.75d | 0d |  | 112h |
| 161 | 1.5.6.2.1 | Codificación de Calculos de tiempos de espera (FrontEnd) |  | 38h | 2014-08-21 | 2014-09-11 |  | 2014-08-21 | 2014-09-11 | 38h | 0d | Oscar Salomón | 38h |
| 162 | 1.5.6.2.2 | Codificación de visualizador de Ordenes (BackEnd) |  | 36h | 2014-08-21 | 2014-09-09 |  | 2014-08-21 | 2014-09-09 | 36h | 0.25d | Lucas Ferrero | 36h |
| 163 | 1.5.6.2.3 | Codificación de personalización gráfica (Android) |  | 38h | 2014-08-21 | 2014-09-11 |  | 2014-08-21 | 2014-09-11 | 38h | 0d | Fernando Raviola | 38h |
| 164 | 1.5.6.3 | **Pruebas** |  | 1.25d | 2014-09-11 | 2014-09-16 | 160 | 2014-09-11 | 2014-09-16 | 1.25d | 0d |  | 30h |
| 165 | 1.5.6.3.1 | Pruebas de comunicación de interfaces y pruebas de funcionalidad |  | 10h | 2014-09-11 | 2014-09-16 |  | 2014-09-11 | 2014-09-16 | 10h | 0d | Fernando Raviola; Lucas Ferrero; Oscar Salomón | 30h |
| 166 | 1.5.6.4 | **Gestión del Proyecto** |  | 0.62d | 2014-09-16 | 2014-09-19 | 164 | 2014-09-16 | 2014-09-19 | 0.62d | 0d |  | 15h |
| 167 | 1.5.6.4.1 | Actualización de Riesgos |  | 1h | 2014-09-16 | 2014-09-16 |  | 2014-09-16 | 2014-09-16 | 1h | 0d | Fernando Raviola; Oscar Salomón | 2h |
| 168 | 1.5.6.4.2 | Revisión de planificacion (posible replanificación) |  | 1h | 2014-09-16 | 2014-09-16 |  | 2014-09-16 | 2014-09-16 | 1h | 0d | Lucas Ferrero | 1h |
| 169 | 1.5.6.4.3 | Generación de Informe #10 |  | 4h | 2014-09-18 | 2014-09-19 | 168, 167 | 2014-09-18 | 2014-09-19 | 4h | 0d | Fernando Raviola; Lucas Ferrero; Oscar Salomón | 12h |
| 170 | 1.5.6.5 | **Gestión de Configuración** |  | 0.25d | 2014-09-19 | 2014-09-19 | 166 | 2014-09-19 | 2014-09-19 | 0.25d | 0d |  | 6h |
| 171 | 1.5.6.5.1 | Versionado de todos los proyectos |  | 2h | 2014-09-19 | 2014-09-19 |  | 2014-09-19 | 2014-09-19 | 2h | 0d | Oscar Salomón | 2h |
| 172 | 1.5.6.5.2 | Revisión de versionado de documentos modificados |  | 2h | 2014-09-19 | 2014-09-19 |  | 2014-09-19 | 2014-09-19 | 2h | 0d | Fernando Raviola; Lucas Ferrero | 4h |
| 173 | 1.6 | Capacidad Operacional Inicial | milestone | 0h | 2014-09-19 | 2014-09-19 | 83 | 2014-09-19 | 2014-09-19 | 0h | 0d |  |  |
| 174 | 1.7 | **TRANSICIÓN** |  | 8.38d | 2014-09-22 | 2014-10-28 | 173 | 2014-09-22 | 2014-10-28 | 8.38d | 0d |  | 201h |
| 175 | 1.7.1 | **Iteración T1** |  | 8.38d | 2014-09-22 | 2014-10-28 |  | 2014-09-22 | 2014-10-28 | 8.38d | 0d |  | 201h |
| 176 | 1.7.1.1 | **Implementación** |  | 2.5d | 2014-09-22 | 2014-10-02 |  | 2014-09-22 | 2014-10-02 | 2.5d | 0d |  | 60h |
| 177 | 1.7.1.1.1 | Elaboracion de documentación para usuarios y videos tutoriales |  | 20h | 2014-09-22 | 2014-10-02 |  | 2014-09-22 | 2014-10-02 | 20h | 0d | Fernando Raviola; Lucas Ferrero; Oscar Salomón | 60h |

| ID | WBS | Task | Type | Duration | Start | Finish | Predecessors | Baseline start | Baseline finish | Baseline duration | Total slack | Resources | Work |
| --- | --- | --- | --- | --- | --- | --- | --- | --- | --- | --- | --- | --- | --- |
| 178 | 1.7.1.2 | **Despliegue** |  | 3d | 2014-10-02 | 2014-10-14 | 176 | 2014-10-02 | 2014-10-14 | 3d | 0d |  | 72h |
| 179 | 1.7.1.2.1 | Modelo de despliegue |  | 10h | 2014-10-02 | 2014-10-07 |  | 2014-10-02 | 2014-10-07 | 10h | 0d | Fernando Raviola; Lucas Ferrero; Oscar Salomón | 30h |
| 180 | 1.7.1.2.2 | Integración y puesta a punto del sistema |  | 14h | 2014-10-07 | 2014-10-14 | 179 | 2014-10-07 | 2014-10-14 | 14h | 0d | Fernando Raviola; Lucas Ferrero; Oscar Salomón | 42h |
| 181 | 1.7.1.3 | **Gestión del Proyecto** |  | 2.62d | 2014-10-16 | 2014-10-27 | 178 | 2014-10-16 | 2014-10-27 | 2.62d | 0d |  | 63h |
| 182 | 1.7.1.3.1 | Actualización de Riesgos |  | 1h | 2014-10-16 | 2014-10-16 |  | 2014-10-16 | 2014-10-16 | 1h | 0d | Fernando Raviola; Lucas Ferrero; Oscar Salomón | 3h |
| 183 | 1.7.1.3.2 | Revisión de planificacion (posible replanificación) |  | 1h | 2014-10-16 | 2014-10-16 | 182 | 2014-10-16 | 2014-10-16 | 1h | 0d | Fernando Raviola; Lucas Ferrero; Oscar Salomón | 3h |
| 184 | 1.7.1.3.3 | Análisis de resultados del proyecto |  | 15h | 2014-10-17 | 2014-10-24 | 183 | 2014-10-17 | 2014-10-24 | 15h | 0d | Fernando Raviola; Lucas Ferrero; Oscar Salomón | 45h |
| 185 | 1.7.1.3.4 | Generación de Informe #11 |  | 4h | 2014-10-24 | 2014-10-27 | 184 | 2014-10-24 | 2014-10-27 | 4h | 0d | Fernando Raviola; Lucas Ferrero; Oscar Salomón | 12h |
| 186 | 1.7.1.4 | **Gestión de Configuración** |  | 0.25d | 2014-10-27 | 2014-10-28 | 181 | 2014-10-27 | 2014-10-28 | 0.25d | 0d |  | 6h |
| 187 | 1.7.1.4.1 | Versionado de todos los proyectos |  | 2h | 2014-10-27 | 2014-10-28 |  | 2014-10-27 | 2014-10-28 | 2h | 0d | Fernando Raviola | 2h |
| 188 | 1.7.1.4.2 | Revisión de versionado de documentos modificados |  | 2h | 2014-10-27 | 2014-10-28 |  | 2014-10-27 | 2014-10-28 | 2h | 0d | Lucas Ferrero; Oscar Salomón | 4h |
| 189 | 1.8 | Lanzamiento de producto | milestone | 0h | 2014-10-28 | 2014-10-28 | 174 | 2014-10-28 | 2014-10-28 | 0h | 0d |  |  |
| 190 | 1.9 | Fin de Proyecto | milestone | 0h | 2014-10-28 | 2014-10-28 | 189 | 2014-10-28 | 2014-10-28 | 0h | 0d |  |  |
